# SOT-MURCIA

Schedule from MS Project XML, 2020-07-20 to 2023-10-25, costs in €.
Acciona

## Schedule

| ID | WBS | Task | Type | Duration | Start | Finish | Predecessors | Total slack | Free slack | Constraint | Cost | Text2 | Text3 |
| --- | --- | --- | --- | --- | --- | --- | --- | --- | --- | --- | --- | --- | --- |
| 1 | 1 | **OBRA CIVIL PLAYA DE VÍAS SUR & PASARELA ESTACIÓN** |  | 107d | 2020-07-20 | 2020-12-15 |  | 0d |  |  | 10,496,000 |  |  |
| 2 | 1.1 | **HITOS** |  | 91d | 2020-08-07 | 2020-12-11 |  | 0d |  |  |  |  |  |
| 3 | 1.1.1 | REPOSICIÓN PROVISIONAL TEL&ORA EL CARMEN | manual | 17d | 2020-08-27 | 2020-09-18 |  |  |  | start no earlier than 2020-08-27 |  |  |  |
| 4 | 1.1.2 | APROBACIÓN ACO LOSA N0 | milestone, manual | 0d | 2020-09-18 | 2020-09-18 |  |  |  | start no earlier than 2020-09-18 |  |  |  |
| 5 | 1.1.3 | APROBACIÓN ACO CIMENTACIONES PASARELA | milestone | 0d | 2020-08-12 | 2020-08-12 | 196SS-4d | 0d |  |  |  |  |  |
| 6 | 1.1.4 | APROBACIÓN ACO ESTRUCTURA PASARELA | milestone | 0d | 2020-08-10 | 2020-08-10 | 194SS | 0d |  |  |  |  |  |
| 7 | 1.1.5 | APROBACIÓN ACO MARQUESINAS | milestone | 0d | 2020-09-25 | 2020-09-25 | 185SS-31d | 0d |  |  |  |  |  |
| 8 | 1.1.6 | APROBACIÓN ACO ANDENES | milestone | 0d | 2020-08-07 | 2020-08-07 | 160SS-21d | 0d |  |  |  |  |  |
| 9 | 1.1.7 | APROBACIÓN ACO DRENAJE PLAYA DE VÍAS | milestone | 0d | 2020-09-30 | 2020-09-30 | 180SS-1d | 0d |  |  |  |  |  |
| 10 | 1.1.8 | APROBACIÓN ACO PANTALLAS ANCLAJES ACTIVOS | milestone, manual | 0d | 2020-09-28 | 2020-09-28 |  |  |  | start no earlier than 2020-09-28 |  |  |  |
| 11 | 1.1.9 | TRABAJOS CMS CONEXIÓN PLAYA VIAS SUR CON V1 ACTUAL |  | 3d | 2020-11-30 | 2020-12-02 | 134FS-2d | 0d |  |  |  |  |  |
| 12 | 1.1.10 | INICIO ACTUACIONES EN OBRA DE PROTECCIÓN DE VIGILANCIA ANDENES | milestone | 0d | 2020-11-05 | 2020-11-05 | 161, 168, 175 | 0d |  |  |  |  |  |
| 13 | 1.1.11 | INICIO ACTUACIONES EN OBRA DE PROTECCIÓN VIGILANCIA CUARTO TÉCNICO | milestone | 0d | 2020-12-11 | 2020-12-11 | 223 | 0d |  |  |  |  |  |
| 14 | 1.2 | **PANTALLAS** |  | 78d | 2020-07-20 | 2020-11-04 |  | 0d |  |  | 8,234,000 |  |  |
| 15 | 1.2.1 | **PS** |  | 54d | 2020-07-20 | 2020-10-01 |  | 0d |  |  | 2,237,000 |  |  |
| 16 | 1.2.1.1 | PANTALLA SUR PS | manual | 22d | 2020-07-20 | 2020-08-18 |  |  |  | start no earlier than 2020-07-20 | 2,075,000 | m² | 7700 |
| 17 | 1.2.1.2 | PANTALLA SUR E INTERMEDIA SUR SSAA ORANGE Y TELEFÓNICA |  | 6d | 2020-09-18 | 2020-09-25 | 3FS-1d | 0d |  |  | 162,000 | m² | 500 |
| 18 | 1.2.1.3 | PANTALLA SUR LOSA S1-20 |  | 4d | 2020-09-28 | 2020-10-01 | 17 | 115d | 0d |  |  |  |  |
| 19 | 1.2.2 | **PIS** |  | 22d | 2020-07-20 | 2020-08-18 |  | 0d |  |  | 1,924,000 |  |  |
| 20 | 1.2.2.1 | PANTALLA INTERMEDIA SUR PIS | manual | 22d | 2020-07-20 | 2020-08-18 |  |  |  | start no earlier than 2020-07-20 | 1,924,000 | m² | 7150 |
| 21 | 1.2.3 | **PIN** |  | 24d | 2020-09-08 | 2020-10-09 |  | 0d |  |  | 117,000 |  |  |
| 22 | 1.2.3.1 | PANTALLA INTERMEDIA NORTE N4 |  | 5d | 2020-09-08 | 2020-09-14 | 282 | 0d |  |  | 117,000 | m² | 400 |
| 23 | 1.2.3.2 | PANTALLAS TAPE (NP) |  | 5d | 2020-10-05 | 2020-10-09 | 18FS+1d | 115d | 0d |  |  |  | 500 |
| 24 | 1.2.4 | **PN** |  | 78d | 2020-07-20 | 2020-11-04 |  | 0d |  |  | 3,956,000 |  |  |
| 25 | 1.2.4.1 | PANTALLA NORTE N4 |  | 10d | 2020-10-12 | 2020-10-23 | 10FS+5d, 23 | 115d | 0d |  | 324,000 | m² | 1200 |
| 26 | 1.2.4.2 | PANTALLA NORTE PN SALVO BATACHES VÍA ACTUAL N3 | manual | 20d | 2020-07-20 | 2020-08-14 |  |  |  |  | 3,399,000 | m² | 12600 |
| 27 | 1.2.4.3 | PANTALLA NORTE E INTERMEDIA NORTE SSAA ORANGE Y TELEFÓNICA |  | 7d | 2020-10-27 | 2020-11-04 | 25FS+1d | 115d |  |  | 233,000 | m² | 860 |

| ID | WBS | Task | Type | Duration | Start | Finish | Predecessors | Total slack | Free slack | Constraint | Cost | Text2 | Text3 |
| --- | --- | --- | --- | --- | --- | --- | --- | --- | --- | --- | --- | --- | --- |
| 28 | 1.3 | **PILOTES** |  | 28d | 2020-08-05 | 2020-09-11 |  | 0d |  |  | 502,000 |  |  |
| 29 | 1.3.1 | PILOTES S1 | manual | 8d | 2020-08-05 | 2020-08-14 |  |  |  |  | 320,000 | ud | 6/4 |
| 30 | 1.3.2 | DESCABEZADO PILOTES S1 |  | 5d | 2020-08-28 | 2020-09-03 | 29SS+4d, 197FS+4d | 9d | 0d |  |  | ud | 6 |
| 31 | 1.3.3 | PILOTES N0 |  | 4d | 2020-08-27 | 2020-09-01 | 29, 197FS+3d | 119d | 0d |  | 182,000 | ud | 6 |
| 32 | 1.3.4 | DESCABEZADO PILOTES N0 |  | 2d | 2020-09-10 | 2020-09-11 | 34SS | 25d |  |  |  | ud | 1 |
| 33 | 1.3.5 | PILAS RECTANGULARES N0 | manual | 7d | 2020-08-19 | 2020-08-27 |  |  |  | start no earlier than 2020-08-19 |  | ud | 4 |
| 34 | 1.3.6 | DESCABEZADO PILAS RECTANGULARES N0 |  | 2d | 2020-09-10 | 2020-09-11 | 118SS-1d | 0d |  |  |  |  |  |
| 35 | 1.4 | **LOSA** |  | 73d | 2020-07-20 | 2020-10-28 |  | 0d |  |  | 1,372,200 |  |  |
| 36 | 1.4.1 | **LOSA S1-03** |  | 10d | 2020-07-20 | 2020-07-31 |  | 0d |  |  | 67,500 |  |  |
| 37 | 1.4.1.1 | HORMIGÓN DE LIMPIEZA LOSA S1-03 | manual | 5d | 2020-07-20 | 2020-07-24 |  |  |  |  | 10,200 | m² | 250 |
| 38 | 1.4.1.2 | FERRALLADO Y ENCOFRADO LOSA S1-03 |  | 4d | 2020-07-27 | 2020-07-30 | 37 | 18d | 0d |  | 35,700 | m² | 250 |
| 39 | 1.4.1.3 | HORMIGONADO LOSA S1-03 |  | 1d | 2020-07-31 | 2020-07-31 | 38 | 51d |  |  | 21,600 | m² | 250 |
| 40 | 1.4.2 | **LOSA S1-05** |  | 13d | 2020-07-20 | 2020-08-05 |  | 0d |  |  | 64,000 |  |  |
| 41 | 1.4.2.1 | HORMIGÓN DE LIMPIEZA LOSA S1-05 | manual | 10d | 2020-07-20 | 2020-07-31 |  |  |  |  | 9,700 | m² | 230 |
| 42 | 1.4.2.2 | FERRALLADO Y ENCOFRADO LOSA S1-05 |  | 5d | 2020-07-29 | 2020-08-04 | 38FS-2d | 18d | 0d |  | 33,800 | m² | 230 |
| 43 | 1.4.2.3 | HORMIGONADO LOSA S1-05 |  | 1d | 2020-08-05 | 2020-08-05 | 41, 42 | 44d |  |  | 20,500 | m² | 230 |
| 44 | 1.4.3 | **LOSA S1-08** |  | 10d | 2020-07-31 | 2020-08-13 |  | 0d |  |  | 81,200 |  |  |
| 45 | 1.4.3.1 | HORMIGÓN DE LIMPIEZA LOSA S1-08 | manual | 4d | 2020-07-31 | 2020-08-05 |  |  |  |  | 12,300 | m² | 300 |
| 46 | 1.4.3.2 | FERRALLADO Y ENCOFRADO LOSA S1-08 |  | 4d | 2020-08-10 | 2020-08-13 | 42FS+3d | 18d | 0d |  | 42,900 | m² | 300 |
| 47 | 1.4.3.3 | HORMIGONADO LOSA S1-08 |  | 1d | 2020-08-13 | 2020-08-13 | 45, 46FS-1d | 38d |  |  | 26,000 | m² | 300 |
| 48 | 1.4.4 | **LOSA S1-10** |  | 11d | 2020-08-04 | 2020-08-18 |  | 0d |  |  | 81,200 |  |  |
| 49 | 1.4.4.1 | HORMIGÓN DE LIMPIEZA LOSA S1-10 | manual | 4d | 2020-08-04 | 2020-08-07 |  |  |  |  | 12,300 | m² | 300 |
| 50 | 1.4.4.2 | FERRALLADO Y ENCOFRADO LOSA S1-10 |  | 4d | 2020-08-12 | 2020-08-17 | 46FS-2d | 18d | 0d |  | 42,900 | m² | 300 |
| 51 | 1.4.4.3 | HORMIGONADO LOSA S1-10 |  | 1d | 2020-08-18 | 2020-08-18 | 49, 50 | 28d |  |  | 26,000 | m² | 300 |

| ID | WBS | Task | Type | Duration | Start | Finish | Predecessors | Total slack | Free slack | Cost | Text2 | Text3 |
| --- | --- | --- | --- | --- | --- | --- | --- | --- | --- | --- | --- | --- |
| 52 | 1.4.5 | **LOSA S1-04** |  | 12d | 2020-08-06 | 2020-08-21 |  | 0d |  | 81,200 |  |  |
| 53 | 1.4.5.1 | HORMIGÓN DE LIMPIEZA LOSA S1-04 | manual | 4d | 2020-08-06 | 2020-08-11 |  |  |  | 12,300 | m² | 300 |
| 54 | 1.4.5.2 | FERRALLADO Y ENCOFRADO LOSA S1-04 |  | 4d | 2020-08-14 | 2020-08-19 | 50FS-2d | 18d | 0d | 42,900 | m² | 300 |
| 55 | 1.4.5.3 | HORMIGONADO LOSA S1-04 |  | 1d | 2020-08-21 | 2020-08-21 | 53, 54FS+1d | 36d |  | 26,000 | m² | 300 |
| 56 | 1.4.6 | **LOSA S1-09** |  | 12d | 2020-08-10 | 2020-08-25 |  | 0d |  | 64,000 |  |  |
| 57 | 1.4.6.1 | HORMIGÓN DE LIMPIEZA LOSA S1-09 | manual | 4d | 2020-08-10 | 2020-08-13 |  |  |  | 9,700 | m² | 230 |
| 58 | 1.4.6.2 | FERRALLADO Y ENCOFRADO LOSA S1-09 |  | 4d | 2020-08-18 | 2020-08-21 | 54FS-2d | 18d | 0d | 33,800 | m² | 230 |
| 59 | 1.4.6.3 | HORMIGONADO LOSA S1-09 |  | 1d | 2020-08-25 | 2020-08-25 | 57, 58FS+1d | 23d |  | 20,500 | m² | 230 |
| 60 | 1.4.7 | **LOSA S1-11** |  | 8d | 2020-08-18 | 2020-08-27 |  | 0d |  | 64,000 |  |  |
| 61 | 1.4.7.1 | HORMIGÓN DE LIMPIEZA LOSA S1-11 | manual | 4d | 2020-08-18 | 2020-08-21 |  |  |  | 9,700 | m² | 230 |
| 62 | 1.4.7.2 | FERRALLADO Y ENCOFRADO LOSA S1-11 |  | 4d | 2020-08-20 | 2020-08-25 | 58FS-2d | 21d | 0d | 33,800 | m² | 230 |
| 63 | 1.4.7.3 | HORMIGONADO LOSA S1-11 |  | 1d | 2020-08-27 | 2020-08-27 | 61, 62FS+1d | 21d |  | 20,500 | m² | 230 |
| 64 | 1.4.8 | **LOSA S1-12** |  | 7d | 2020-08-24 | 2020-09-01 |  | 0d |  | 56,100 |  |  |
| 65 | 1.4.8.1 | HORMIGÓN DE LIMPIEZA LOSA S1-12 | manual | 3d | 2020-08-24 | 2020-08-26 |  |  |  | 8,500 | m² | 210 |
| 66 | 1.4.8.2 | FERRALLADO Y ENCOFRADO LOSA S1-12 |  | 3d | 2020-08-27 | 2020-08-31 | 65 | 15d | 0d | 29,600 | m² | 210 |
| 67 | 1.4.8.3 | HORMIGONADO LOSA S1-12 |  | 1d | 2020-09-01 | 2020-09-01 | 65, 66 | 18d |  | 18,000 | m² | 210 |
| 68 | 1.4.9 | **LOSA S1-13** |  | 8d | 2020-08-26 | 2020-09-04 |  | 0d |  | 64,000 |  |  |
| 69 | 1.4.9.1 | HORMIGÓN DE LIMPIEZA LOSA S1-13 | manual | 5d | 2020-08-26 | 2020-09-01 |  |  |  | 9,700 | m² | 200 |
| 70 | 1.4.9.2 | FERRALLADO Y ENCOFRADO LOSA S1-13 |  | 4d | 2020-08-31 | 2020-09-03 | 66FS-1d | 15d | 0d | 33,800 | m² | 200 |
| 71 | 1.4.9.3 | HORMIGONADO LOSA S1-13 |  | 1d | 2020-09-04 | 2020-09-04 | 69, 70 | 15d |  | 20,500 | m² | 200 |
| 72 | 1.4.10 | **LOSA S1-16** |  | 14d | 2020-08-25 | 2020-09-11 |  | 0d |  | 81,200 |  |  |
| 73 | 1.4.10.1 | HORMIGÓN DE LIMPIEZA LOSA S1-16 | manual | 7d | 2020-08-25 | 2020-09-02 |  |  |  | 12,300 | m² | 420 |
| 74 | 1.4.10.2 | FERRALLADO Y ENCOFRADO LOSA S1-16 |  | 5d | 2020-09-04 | 2020-09-10 | 58, 30, 73 | 9d | 0d | 42,900 | m² | 420 |
| 75 | 1.4.10.3 | HORMIGONADO LOSA S1-16 |  | 1d | 2020-09-11 | 2020-09-11 | 73, 74 | 9d | 4d | 26,000 | m² | 420 |

| ID | WBS | Task | Duration | Start | Finish | Predecessors | Total slack | Free slack | Cost | Text2 | Text3 |
| --- | --- | --- | --- | --- | --- | --- | --- | --- | --- | --- | --- |
| 76 | 1.4.11 | **LOSA S1-15** | 18d | 2020-08-26 | 2020-09-18 |  | 0d |  | 105,600 |  |  |
| 77 | 1.4.11.1 | HORMIGÓN DE LIMPIEZA LOSA S1-15 | 8d | 2020-08-26 | 2020-09-04 | 197FS+2d | 0d |  | 16,000 | m² | 390 |
| 78 | 1.4.11.2 | FERRALLADO Y ENCOFRADO LOSA S1-15 | 5d | 2020-09-07 | 2020-09-11 | 77, 30 | 9d | 4d | 55,800 | m² | 390 |
| 79 | 1.4.11.3 | HORMIGONADO LOSA S1-15 | 1d | 2020-09-18 | 2020-09-18 | 77, 78, 75, 83SS | 5d |  | 33,800 | m² | 390 |
| 80 | 1.4.12 | **LOSA S1-14** | 9d | 2020-09-08 | 2020-09-18 |  | 0d |  | 104,100 |  |  |
| 81 | 1.4.12.1 | HORMIGÓN DE LIMPIEZA LOSA S1-14 | 5d | 2020-09-08 | 2020-09-14 | 77FS+1d | 0d |  | 17,200 | m² | 300 |
| 82 | 1.4.12.2 | FERRALLADO Y ENCOFRADO LOSA S1-14 | 3d | 2020-09-15 | 2020-09-17 | 81 | 0d |  | 60,100 | m² | 300 |
| 83 | 1.4.12.3 | HORMIGONADO LOSA S1-14 | 1d | 2020-09-18 | 2020-09-18 | 81, 82 | 0d |  | 26,800 | m² | 300 |
| 84 | 1.4.13 | **LOSA S1-17** | 14d | 2020-09-08 | 2020-09-25 |  | 0d |  |  |  |  |
| 85 | 1.4.13.1 | HORMIGÓN DE LIMPIEZA LOSA S1-17 | 5d | 2020-09-08 | 2020-09-14 | 73FS+3d | 0d |  |  | m² | 230 |
| 86 | 1.4.13.2 | FERRALLADO Y ENCOFRADO LOSA S1-17 | 4d | 2020-09-21 | 2020-09-24 | 85FS+4d | 0d |  |  | m² | 230 |
| 87 | 1.4.13.3 | HORMIGONADO LOSA S1-17 | 1d | 2020-09-25 | 2020-09-25 | 85, 86 | 0d |  |  | m² | 230 |
| 88 | 1.4.14 | **LOSA S1-06** | 7d | 2020-09-28 | 2020-10-06 |  | 0d |  | 40,200 |  |  |
| 89 | 1.4.14.1 | HORMIGÓN DE LIMPIEZA LOSA S1-06 | 2d | 2020-09-28 | 2020-09-29 | 85FS+1d, 17 | 0d |  | 6,100 | m² | 150 |
| 90 | 1.4.14.2 | FERRALLADO Y ENCOFRADO LOSA S1-06 | 3d | 2020-09-30 | 2020-10-02 | 89 | 0d |  | 21,200 | m² | 150 |
| 91 | 1.4.14.3 | HORMIGONADO LOSA S1-06 | 1d | 2020-10-06 | 2020-10-06 | 89FS+1d, 90FS+1d | 0d |  | 12,900 | m² | 150 |
| 92 | 1.4.15 | **LOSA S1-07** | 7d | 2020-09-28 | 2020-10-06 |  | 0d |  | 33,900 |  |  |
| 93 | 1.4.15.1 | HORMIGÓN DE LIMPIEZA LOSA S1-07 | 2d | 2020-09-28 | 2020-09-29 | 89SS | 0d |  | 5,100 | m² | 120 |
| 94 | 1.4.15.2 | FERRALLADO Y ENCOFRADO LOSA S1-07 | 3d | 2020-09-30 | 2020-10-02 | 93 | 2d |  | 17,900 | m² | 120 |
| 95 | 1.4.15.3 | HORMIGONADO LOSA S1-07 | 1d | 2020-10-06 | 2020-10-06 | 89FS+1d, 90FS+1d | 0d |  | 10,900 | m² | 120 |
| 96 | 1.4.16 | **LOSA S1-02** | 5d | 2020-10-05 | 2020-10-09 |  | 0d |  |  |  |  |
| 97 | 1.4.16.1 | HORMIGÓN DE LIMPIEZA LOSA S1-02 | 1d | 2020-10-05 | 2020-10-05 | 93FS+3d | 0d |  |  |  |  |
| 98 | 1.4.16.2 | FERRALLADO Y ENCOFRADO LOSA S1-02 | 3d | 2020-10-06 | 2020-10-08 | 97 | 1d | 0d |  |  |  |
| 99 | 1.4.16.3 | HORMIGONADO LOSA S1-02 | 1d | 2020-10-09 | 2020-10-09 | 98 | 1d |  |  |  |  |

| ID | WBS | Task | Duration | Start | Finish | Predecessors | Total slack | Free slack | Cost | Text2 | Text3 |
| --- | --- | --- | --- | --- | --- | --- | --- | --- | --- | --- | --- |
| 100 | 1.4.17 | **LOSA S1-01** | 5d | 2020-10-05 | 2020-10-09 |  | 0d |  | 64,000 |  |  |
| 101 | 1.4.17.1 | HORMIGÓN DE LIMPIEZA LOSA S1-01 | 1d | 2020-10-05 | 2020-10-05 | 97SS | 0d |  | 9,700 | m² | 230 |
| 102 | 1.4.17.2 | FERRALLADO Y ENCOFRADO LOSA S1-01 | 3d | 2020-10-06 | 2020-10-08 | 101 | 1d | 0d | 33,800 | m² | 230 |
| 103 | 1.4.17.3 | HORMIGONADO LOSA S1-01 | 1d | 2020-10-09 | 2020-10-09 | 102 | 1d |  | 20,500 | m² | 230 |
| 104 | 1.4.18 | **LOSA S1-18** | 10d | 2020-10-05 | 2020-10-16 |  | 3d |  |  |  |  |
| 105 | 1.4.18.1 | HORMIGÓN DE LIMPIEZA LOSA S1-18 | 3d | 2020-10-05 | 2020-10-07 | 97SS | 10d |  |  |  |  |
| 106 | 1.4.18.2 | FERRALLADO Y ENCOFRADO LOSA S1-18 | 4d | 2020-10-09 | 2020-10-14 | 101FS+3d, 123FS+3d | 2d | 0d |  |  |  |
| 107 | 1.4.18.3 | HORMIGONADO LOSA S1-18 | 1d | 2020-10-16 | 2020-10-16 | 106FS+1d | 3d |  |  |  |  |
| 108 | 1.4.19 | **LOSA S1-19** | 11d | 2020-10-05 | 2020-10-19 |  | 2d |  | 81,200 |  |  |
| 109 | 1.4.19.1 | HORMIGÓN DE LIMPIEZA LOSA S1-19 | 3d | 2020-10-05 | 2020-10-07 | 97SS | 10d |  | 12,300 | m² | 300 |
| 110 | 1.4.19.2 | FERRALLADO Y ENCOFRADO LOSA S1-19 | 5d | 2020-10-09 | 2020-10-15 | 101FS+3d, 123FS+3d | 1d | 0d | 42,900 | m² | 300 |
| 111 | 1.4.19.3 | HORMIGONADO LOSA S1-19 | 1d | 2020-10-19 | 2020-10-19 | 110FS+1d | 2d |  | 26,000 | m² | 300 |
| 112 | 1.4.20 | **LOSA S1-20** | 13d | 2020-10-05 | 2020-10-21 |  | 0d |  |  |  |  |
| 113 | 1.4.20.1 | HORMIGÓN DE LIMPIEZA LOSA S1-20 | 2d | 2020-10-05 | 2020-10-06 | 97SS | 11d |  |  |  |  |
| 114 | 1.4.20.2 | FERRALLADO Y ENCOFRADO LOSA S1-20 | 6d | 2020-10-09 | 2020-10-16 | 101FS+3d, 123FS+3d | 0d |  |  |  |  |
| 115 | 1.4.20.3 | HORMIGONADO LOSA S1-20 | 1d | 2020-10-21 | 2020-10-21 | 114FS+2d | 0d |  |  |  |  |
| 116 | 1.4.21 | **LOSA N0-01 + AMPLIACION PARKING** | 14d | 2020-09-07 | 2020-09-24 |  | 0d |  | 79,600 |  |  |
| 117 | 1.4.21.1 | RETRANQUEO SSAA Y FAROLAS (OCUPACION PARKING SABA) | 2d | 2020-09-07 | 2020-09-08 | 3SS+7d | 0d |  |  |  |  |
| 118 | 1.4.21.2 | HORMIGÓN DE LIMPIEZA LOSA N0-01 | 2d | 2020-09-11 | 2020-09-14 | 117FS+2d | 0d |  | 12,000 | m² | 290 |
| 119 | 1.4.21.3 | FERRALLADO Y ENCOFRADO LOSA N0-01 | 5d | 2020-09-17 | 2020-09-23 | 118, 4FS-1d | 3d | 0d | 42,100 | m² | 290 |
| 120 | 1.4.21.4 | HORMIGONADO LOSA N0-01 | 1d | 2020-09-24 | 2020-09-24 | 118, 119 | 14d | 5d | 25,500 | m² | 290 |
| 121 | 1.4.22 | **LOSA N0-02** | 11d | 2020-09-17 | 2020-10-01 |  | 0d |  | 79,600 |  |  |
| 122 | 1.4.22.1 | HORMIGÓN DE LIMPIEZA LOSA N0-02 | 1d | 2020-09-17 | 2020-09-17 | 34FS+3d | 0d |  | 12,000 | m² | 290 |
| 123 | 1.4.22.2 | FERRALLADO Y ENCOFRADO LOSA N0-02 | 5d | 2020-09-24 | 2020-09-30 | 119 | 3d | 0d | 42,100 | m² | 290 |
| 124 | 1.4.22.3 | HORMIGONADO LOSA N0-02 | 1d | 2020-10-01 | 2020-10-01 | 123 | 9d | 0d | 25,500 | m² | 290 |

| ID | WBS | Task | Duration | Start | Finish | Predecessors | Total slack | Free slack | Cost | Text2 | Text3 |
| --- | --- | --- | --- | --- | --- | --- | --- | --- | --- | --- | --- |
| 125 | 1.4.23 | **LOSA N0-03** | 5d | 2020-10-16 | 2020-10-22 |  | 0d |  | 79,600 |  |  |
| 126 | 1.4.23.1 | HORMIGÓN DE LIMPIEZA LOSA N0-03 | 1d | 2020-10-19 | 2020-10-19 | 32, 34, 98SS+4d, 102, 106, 110, 114 | 0d |  | 12,000 | m² | 290 |
| 127 | 1.4.23.2 | FERRALLADO Y ENCOFRADO LOSA N0-03 | 4d | 2020-10-16 | 2020-10-21 | 126FS-2d, 119FS-2d, 4FS-2d, 114FS-4d | 0d |  | 42,100 | m² | 290 |
| 128 | 1.4.23.3 | HORMIGONADO LOSA N0-03 | 1d | 2020-10-22 | 2020-10-22 | 127, 32 | 0d |  | 25,500 | m² | 290 |
| 129 | 1.4.24 | **IMPERMEABILIZACIÓN** | 17d | 2020-10-06 | 2020-10-28 |  | 0d |  |  |  |  |
| 130 | 1.4.24.1 | IMPERMEABILIZACIÓN LOSA S1-09 a S1-17 | 5d | 2020-10-06 | 2020-10-12 | 56FS+6d, 60FS+6d, 64FS+6d, 68FS+6d, 72FS+6d, 84FS+6d, 48FS+6d, 80FS+6d, 76FS+6d | 0d |  |  | m² |  |
| 131 | 1.4.24.2 | IMPERMEABILIZACION SI-01 a SI-08 | 7d | 2020-10-13 | 2020-10-21 | 100, 96, 36, 52, 40, 88, 92, 44, 130 | 0d |  |  |  |  |
| 132 | 1.4.24.3 | IMPERMEABILIZACIÓN LOSA S1-18 a S1-20 | 3d | 2020-10-22 | 2020-10-26 | 104, 108, 112, 131 | 0d |  |  |  |  |
| 133 | 1.4.24.4 | IMPERMEABILIZACIÓN LOSA N0-01 y N0-02 | 2d | 2020-10-27 | 2020-10-28 | 120FS+5d, 124FS+5d, 132 | 0d |  |  | m² | 600 |
| 134 | 1.5 | **INFRAESTRUCTURA, SUPERESTRUCTURA DE VÍA Y ANDENES** | 71d | 2020-08-25 | 2020-12-01 |  | 0d |  |  |  |  |
| 135 | 1.5.1 | **V13S, V11S y V9S** | 55d | 2020-08-25 | 2020-11-09 |  | 0d |  |  |  |  |
| 136 | 1.5.1.1 | Retirada depósitos polímeros, desvíos, etc | 5d | 2020-08-25 | 2020-08-31 | 29, 197FS+1d | 0d |  |  | ud |  |
| 137 | 1.5.1.2 | Rebaje de tierras contaminadas V13S, V11S y V9S | 14d | 2020-08-28 | 2020-09-16 | 29, 197, 136FS-2d | 0d |  |  | m³ |  |
| 138 | 1.5.1.3 | Levante, demolición y rebaje de tierras V13S (vía en placa) | 6d | 2020-09-25 | 2020-10-02 | 137FS+6d | 2d |  |  | m³ |  |
| 139 | 1.5.1.4 | Extendido de material de molienda V13S, V11S y V9S | 15d | 2020-09-14 | 2020-10-02 | 137FS-3d, 136FS-3d | 0d |  |  | m³ |  |
| 140 | 1.5.1.5 | Extendido de capa de forma V13S, V11S y V9S | 6d | 2020-09-29 | 2020-10-06 | 139FS-4d, 137, 138FF | 0d |  |  | m³ |  |
| 141 | 1.5.1.6 | Extendido de subbalasto V13S, V11S y V9S | 5d | 2020-10-08 | 2020-10-14 | 140FS+1d, 180FS-12d | 0d |  |  | m² |  |
| 142 | 1.5.1.7 | Extendido de cama de balasto V13S, V11S y V9S | 2d | 2020-10-16 | 2020-10-19 | 141FS+1d | 0d |  |  | m² |  |
| 143 | 1.5.1.8 | Montaje de vías V13S, V11S y V9S | 9d | 2020-10-19 | 2020-10-29 | 142FS-1d | 0d |  |  | m³ |  |
| 144 | 1.5.1.9 | Montaje de los tres desvíos del sur | 9d | 2020-10-19 | 2020-10-29 | 143SS | 4d | 0d |  | ud |  |
| 145 | 1.5.1.10 | Extendido de balasto V13S, V11S y V9S | 9d | 2020-10-19 | 2020-10-29 | 143SS, 144SS | 4d | 1d |  | m |  |
| 146 | 1.5.1.11 | Levantes de vía V13S,V11S y V9S y desvíos sur | 6d | 2020-11-02 | 2020-11-09 | 145, 154 | 3d | 0d |  | ud |  |
| 147 | 1.5.1.12 | Colocación de postes HM y KM en vías V13S, V11S y V9S | 6d | 2020-11-02 | 2020-11-09 | 146SS | 16d |  |  | m |  |
| 148 | 1.5.2 | **V7S y V5S** | 19d | 2020-10-14 | 2020-11-09 |  | 0d |  |  |  |  |
| 149 | 1.5.2.1 | Colocación de manta antiruido en vías V7S y V5S | 12d | 2020-10-14 | 2020-10-29 | 130FS+1d, 132FF+1d | 0d |  |  | m² |  |
| 150 | 1.5.2.2 | Extendido de capa de forma y subbalasto V7S y V5S | 7d | 2020-10-22 | 2020-10-30 | 149FS-6d | 22d |  |  | ud |  |
| 151 | 1.5.2.3 | Extendido cama de balasto V7S y V5S | 7d | 2020-10-22 | 2020-10-30 | 149FS-6d | 22d |  |  | m² |  |
| 152 | 1.5.2.4 | Montaje de vías V7S y V5S | 7d | 2020-10-22 | 2020-10-30 | 149FS-6d | 0d |  |  | ud |  |
| 153 | 1.5.2.5 | Montaje desvíos norte | 7d | 2020-10-22 | 2020-10-30 | 149FS-6d | 0d |  |  | m³ |  |
| 154 | 1.5.2.6 | Extendido de balasto a vía V7S | 7d | 2020-10-22 | 2020-10-30 | 152SS, 153SS | 0d |  |  | ud |  |
| 155 | 1.5.2.7 | Levantes de vía V7S y V5S y desvíos norte | 6d | 2020-11-02 | 2020-11-09 | 146SS | 3d | 0d |  | ud |  |
| 156 | 1.5.2.8 | Postes HM y Km V7S y V5S | 6d | 2020-11-02 | 2020-11-09 | 155SS | 16d |  |  | ud |  |

| ID | WBS | Task | Duration | Start | Finish | Predecessors | Total slack | Free slack | Text2 |
| --- | --- | --- | --- | --- | --- | --- | --- | --- | --- |
| 157 | 1.5.3 | **ANDENES** | 59d | 2020-09-07 | 2020-11-26 |  | 0d |  |  |
| 158 | 1.5.3.1 | **ANDÉN 1** | 59d | 2020-09-07 | 2020-11-26 |  | 0d |  |  |
| 159 | 1.5.3.1.1 | Muro prefabricado andén 1 sur | 6d | 2020-10-22 | 2020-10-29 | 149FS-9d, 154FF-1d | 0d |  | m³ |
| 160 | 1.5.3.1.2 | Muro in situ andén 1 norte | 27d | 2020-09-07 | 2020-10-13 | 40FF+5d, 88FF+5d, 92FF+5d, 44FF+5d, 56FF+5d, 48FF+5d, 60FF+5d, 64FF+5d, 68FF+5d, 80FF+5d, 76FF+5d, 72FF+5d | 0d |  | m |
| 161 | 1.5.3.1.3 | Prisma de instalaciones andén 1 | 5d | 2020-10-29 | 2020-11-04 | 160FS-1d, 159FS-1d | 1d |  | m³ |
| 162 | 1.5.3.1.4 | Relleno de tierras de andén 1 | 6d | 2020-10-29 | 2020-11-05 | 160FS-1d, 159FS-1d | 0d |  | m |
| 163 | 1.5.3.1.5 | Solados andén 1 y pieza borde de andén | 6d | 2020-11-06 | 2020-11-13 | 162 | 0d |  | ud |
| 164 | 1.5.3.1.6 | Acabados andén 1 | 9d | 2020-11-16 | 2020-11-26 | 163 | 0d |  | m³ |
| 165 | 1.5.3.2 | **ANDÉN 2** | 38d | 2020-10-06 | 2020-11-26 |  | 0d |  |  |
| 166 | 1.5.3.2.1 | Muro prefabricado andén 2 sur | 6d | 2020-10-06 | 2020-10-13 | 140FS-1d | 12d |  | m² |
| 167 | 1.5.3.2.2 | Muro prefabricado andén 2 norte | 6d | 2020-10-22 | 2020-10-29 | 149FS-9d, 154FF-1d | 0d |  | m² |
| 168 | 1.5.3.2.3 | Prisma instalaciones andén 2 | 5d | 2020-10-30 | 2020-11-05 | 166, 167 | 0d |  | m |
| 169 | 1.5.3.2.4 | Relleno de tierras de andén 2 | 6d | 2020-10-30 | 2020-11-06 | 166, 167 | 0d |  | m |
| 170 | 1.5.3.2.5 | Solados andén 2 y pieza borde de andén | 6d | 2020-11-06 | 2020-11-13 | 168 | 0d |  | m³ |
| 171 | 1.5.3.2.6 | Acabados andén 2 | 9d | 2020-11-16 | 2020-11-26 | 170 | 0d |  | m³ |
| 172 | 1.5.3.3 | **ANDÉN 3** | 38d | 2020-10-06 | 2020-11-26 |  | 0d |  |  |
| 173 | 1.5.3.3.1 | Muro prefabricado andén 3 sur | 6d | 2020-10-06 | 2020-10-13 | 140FS-1d | 0d |  | m |
| 174 | 1.5.3.3.2 | Muro prefabricado andén 3 norte | 6d | 2020-10-06 | 2020-10-13 | 140FS-1d | 0d |  | m |
| 175 | 1.5.3.3.3 | Prisma de instalaciones andén 3 | 5d | 2020-10-14 | 2020-10-20 | 173, 174 | 0d |  | m³ |
| 176 | 1.5.3.3.4 | Relleno de tierras de andén 3 | 6d | 2020-10-14 | 2020-10-21 | 173, 174 | 12d | 0d | m³ |
| 177 | 1.5.3.3.5 | Solados de andén 3 y pieza borde de andén | 6d | 2020-10-22 | 2020-10-29 | 176 | 14d | 11d | m |
| 178 | 1.5.3.3.6 | Acabados andén 3 | 9d | 2020-11-16 | 2020-11-26 | 177, 164SS, 171SS | 3d |  | m² |
| 179 | 1.5.4 | **VARIOS** | 44d | 2020-10-01 | 2020-12-01 |  | 0d |  |  |
| 180 | 1.5.4.1 | Drenaje | 17d | 2020-10-01 | 2020-10-23 | 140FS-4d | 0d |  | ud |
| 181 | 1.5.4.2 | Ejecución de toperas | 5d | 2020-11-25 | 2020-12-01 | 231 | 0d |  | m |
| 182 | 1.5.4.3 | Señalética andenes | 5d | 2020-11-20 | 2020-11-26 | 158FS-5d, 165FS-5d, 172FS-5d | 3d |  | m² |
| 183 | 1.5.4.4 | Soldadura y neutralizaciones | 13d | 2020-11-10 | 2020-11-26 | 146, 155, 144, 153 | 3d |  | m² |
| 184 | 1.5.4.5 | Mobiliario urbano | 5d | 2020-11-20 | 2020-11-26 | 158FS-5d, 165FS-5d, 172FS-5d | 3d |  | ud |

| ID | WBS | Task | Type | Duration | Start | Finish | Predecessors | Total slack | Cost | Text2 | Text3 |
| --- | --- | --- | --- | --- | --- | --- | --- | --- | --- | --- | --- |
| 185 | 1.6 | **MARQUESINAS ANDENES SUR** |  | 10d | 2020-11-09 | 2020-11-20 |  | 0d |  |  |  |
| 186 | 1.6.1 | MARQUESINAS andén 3 |  | 10d | 2020-11-09 | 2020-11-20 | 176, 169, 162 | 0d |  | m² | 380 |
| 187 | 1.6.2 | MARQUESINAS andén 2 |  | 10d | 2020-11-09 | 2020-11-20 | 169, 176, 162 | 0d |  | m² | 600 |
| 188 | 1.6.3 | MARQUESINAS andén 1 |  | 10d | 2020-11-09 | 2020-11-20 | 162, 176, 169 | 0d |  | m² | 380 |
| 189 | 1.6.4 | MARQUESINAS auxiliares andén 3 |  | 10d | 2020-11-09 | 2020-11-20 | 176, 169, 162 | 0d |  | m² | 270 |
| 190 | 1.6.5 | MARQUESINAS auxiliares andén 2 |  | 10d | 2020-11-09 | 2020-11-20 | 169, 176, 162 | 0d |  | m² | Incl_MA3 |
| 191 | 1.6.6 | MARQUESINAS auxiliares andén 1 |  | 10d | 2020-11-09 | 2020-11-20 | 162, 176, 169 | 0d |  | m² | 50 |
| 192 | 1.7 | **PASARELA ESTACIÓN** |  | 92d | 2020-08-10 | 2020-12-15 |  | 0d | 375,800 |  |  |
| 193 | 1.7.1 | **ESTRUCTURA** |  | 91d | 2020-08-10 | 2020-12-14 |  | 0d | 255,800 |  |  |
| 194 | 1.7.1.1 | FABRICACIÓN | manual | 79d | 2020-08-10 | 2020-11-26 |  |  |  |  |  |
| 195 | 1.7.1.2 | SUMINISTRO DE MATERIAL |  | 30d | 2020-10-26 | 2020-12-04 | 204SS | 0d |  |  |  |
| 196 | 1.7.1.3 | **CIMENTACIÓN CASTILLETES** |  | 48d | 2020-08-18 | 2020-10-22 |  | 0d |  |  |  |
| 197 | 1.7.1.3.1 | CIMENTACIÓN NÚCLEO 4 _PILOTES |  | 4d | 2020-08-18 | 2020-08-21 | 29FS+1d | 0d |  | ud | 5 |
| 198 | 1.7.1.3.2 | DESCABEZADO PILOTES NÚCLEO 4 |  | 3d | 2020-09-03 | 2020-09-07 | 197FS+1d, 73FS-2d, 77FS-2d | 0d |  | ud | 5 |
| 199 | 1.7.1.3.3 | CIMENTACIÓN NÚCLEO 4 _ENCEPADO/MUROS |  | 15d | 2020-09-30 | 2020-10-20 | 198FS+16d | 0d |  | m | 1 |
| 200 | 1.7.1.3.4 | CIMENTACIÓN NÚCLEO 3_ MUROS |  | 11d | 2020-09-30 | 2020-10-14 | 76FS+7d | 12d |  | m | 1 |
| 201 | 1.7.1.3.5 | CIMENTACIÓN NÚCLEO 2_ MUROS |  | 10d | 2020-10-09 | 2020-10-22 | 120FS+5d, 124FS+5d | 9d |  | m | 1 |
| 202 | 1.7.1.3.6 | CIMENTACIÓN NÚCLEO 1_ MUROS |  | 10d | 2020-10-09 | 2020-10-22 | 120FS+5d, 124FS+5d | 16d |  | m | 1 |
| 203 | 1.7.1.4 | **CASTILLETES** |  | 20d | 2020-10-26 | 2020-11-20 |  | 0d | 8,800 |  |  |
| 204 | 1.7.1.4.1 | SUM. Y MONTAJE EN OBRA DE CASTILLETE NÚCLEO 4 |  | 8d | 2020-10-26 | 2020-11-04 | 199FS+3d | 0d | 2,200 | kg | 2000 |
| 205 | 1.7.1.4.2 | SUM. Y MONTAJE EN OBRA DE CASTILLETE NÚCLEO 3 |  | 7d | 2020-11-02 | 2020-11-10 | 204FS-3d, 200 | 0d | 2,200 | kg | 2000 |
| 206 | 1.7.1.4.3 | SUM. Y MONTAJE EN OBRA DE CASTILLETE NÚCLEO 2 |  | 6d | 2020-11-06 | 2020-11-13 | 201FS+1d, 205FS-3d | 0d | 2,200 | kg | 2000 |
| 207 | 1.7.1.4.4 | SUM. Y MONTAJE EN OBRA DE CASTILLETE NÚCLEO 1 |  | 5d | 2020-11-16 | 2020-11-20 | 202, 206 | 0d | 2,200 | kg | 2000 |
| 208 | 1.7.1.5 | **VANOS** |  | 19d | 2020-11-16 | 2020-12-10 |  | 0d | 43,500 |  |  |
| 209 | 1.7.1.5.1 | MONTAJE EN OBRA DE VANO 3 (CASTILLETE 4-3) |  | 7d | 2020-11-16 | 2020-11-24 | 204FS+3d, 205FS+3d | 8d | 13,000 | kg | 6000 |
| 210 | 1.7.1.5.2 | MONTAJE EN OBRA DE VANO 2 (CASTILLETE 3-2) |  | 7d | 2020-11-19 | 2020-11-27 | 205FS+3d, 206FS+3d | 5d | 11,000 | kg | 4500 |
| 211 | 1.7.1.5.3 | MONTAJE EN OBRA DE VANO 1 (CASTILLETE 2-1) |  | 7d | 2020-11-26 | 2020-12-04 | 206FS+3d, 207FS+3d | 0d | 11,000 | kg | 4500 |
| 212 | 1.7.1.5.4 | HORMIGONADO DE FORJADO |  | 2d | 2020-12-09 | 2020-12-10 | 209FS+2d, 210FS+2d, 211FS+2d | 0d | 8,500 | m² | 160 |

| ID | WBS | Task | Duration | Start | Finish | Predecessors | Total slack | Cost | Text2 | Text3 |
| --- | --- | --- | --- | --- | --- | --- | --- | --- | --- | --- |
| 213 | 1.7.1.6 | **ESCALERAS** | 16d | 2020-11-06 | 2020-11-27 |  | 0d | 3,300 |  |  |
| 214 | 1.7.1.6.1 | MONTAJE EN OBRA DE ESCALERA 3 (CASTILLETE 4) | 4d | 2020-11-06 | 2020-11-11 | 204FS+1d | 0d | 1,100 | kg | 500 |
| 215 | 1.7.1.6.2 | MONTAJE EN OBRA DE ESCALERA 2 (CASTILLETE 3) | 4d | 2020-11-12 | 2020-11-17 | 205FS+1d | 0d | 1,100 | kg | 500 |
| 216 | 1.7.1.6.3 | MONTAJE EN OBRA DE ESCALERA 1 (CASTILLETE 1) | 4d | 2020-11-24 | 2020-11-27 | 207FS+1d | 0d | 1,100 | kg | 500 |
| 217 | 1.7.1.7 | **ACABADOS** | 16d | 2020-11-23 | 2020-12-14 |  | 0d | 200,200 |  |  |
| 218 | 1.7.1.7.1 | CUBIERTA, CANALON Y BAJANTES | 9d | 2020-11-26 | 2020-12-08 | 209SS, 210SS, 211SS | 5d | 80,000 | m² | 1000 |
| 219 | 1.7.1.7.2 | POLICARBONATO/REJILLA VENTILACIÓN | 9d | 2020-11-26 | 2020-12-08 | 209SS, 210SS, 211SS | 5d | 86,000 | m² | 795 |
| 220 | 1.7.1.7.3 | PASAMANOS VANOS | 9d | 2020-11-26 | 2020-12-08 | 209SS, 210SS, 211SS | 5d | 5,500 | m | 120 |
| 221 | 1.7.1.7.4 | SOLADO PODOTÁCTIL | 2d | 2020-12-11 | 2020-12-14 | 212 | 1d | 7,200 | m² | 60 |
| 222 | 1.7.1.7.5 | CERRAMIENTO CASTILLETES ASCENSORES. VIDRIO O CHAPA | 10d | 2020-11-23 | 2020-12-04 | 203 | 0d | 21,500 | m² | 130 |
| 223 | 1.7.2 | **ENTRADA PASARELA** | 27d | 2020-11-05 | 2020-12-11 |  | 0d |  |  |  |
| 224 | 1.7.2.1 | MUROS | 9d | 2020-11-05 | 2020-11-17 | 133FS+5d | 0d |  |  |  |
| 225 | 1.7.2.2 | IMPERMEABILIZACIÓN MUROS | 5d | 2020-11-23 | 2020-11-27 | 224SS+12d | 0d |  |  |  |
| 226 | 1.7.2.3 | RELLENO TIERRAS Y COMPACTADO | 6d | 2020-11-30 | 2020-12-07 | 225SS+5d | 0d |  |  |  |
| 227 | 1.7.2.4 | LOSA SOLERA Y PAVIMENTO | 4d | 2020-12-08 | 2020-12-11 | 226 | 0d |  |  |  |
| 228 | 1.7.3 | **MONTAJE ASCENSORES** | 29d | 2020-11-05 | 2020-12-15 |  | 0d | 120,000 |  |  |
| 229 | 1.7.3.1 | **MONTAJE MECÁNICO** | 21d | 2020-11-05 | 2020-12-03 |  | 0d | 120,000 |  |  |
| 230 | 1.7.3.1.1 | ASCENSOR 5-6 (núcleo 4) | 7d | 2020-11-05 | 2020-11-13 | 204 | 0d | 40,000 | ud | 1 |
| 231 | 1.7.3.1.2 | ASCENSOR 4-3 (núcleo 3) | 7d | 2020-11-16 | 2020-11-24 | 230, 205 | 0d | 40,000 | ud | 1 |
| 232 | 1.7.3.1.3 | ASCENSOR 1-2 (núcleo 1) | 7d | 2020-11-25 | 2020-12-03 | 231, 207 | 1d | 40,000 | ud | 1 |
| 233 | 1.7.3.2 | **MONTAJE ELÉCTRICO** | 7d | 2020-12-07 | 2020-12-15 |  | 0d |  |  |  |
| 234 | 1.7.3.2.1 | ASCENSOR 5-6 (núcleo 4) | 7d | 2020-12-07 | 2020-12-15 | 222, 230 | 0d |  | ud | 1 |
| 235 | 1.7.3.2.2 | ASCENSOR 4-3 (núcleo 3) | 7d | 2020-12-07 | 2020-12-15 | 222, 231 | 0d |  | ud | 1 |
| 236 | 1.7.3.2.3 | ASCENSOR 1-2 (núcleo 1) | 7d | 2020-12-07 | 2020-12-15 | 222, 232 | 0d |  | ud | 1 |
| 237 | 1.7.3.3 | PUESTA A PUNTO | 1d | 2020-12-15 | 2020-12-15 | 233FS-1d | 0d |  | ud | 1 |
| 238 | 1.7.3.4 | PUESTA EN MARCHA | 1d | 2020-12-15 | 2020-12-15 | 233FS-1d | 0d |  | ud | 1 |
| 239 | 1.7.4 | PRUEBA DE CARGA | 1d | 2020-12-15 | 2020-12-15 | 212FS+2d, 229FS-1d, 218FS-1d, 219FS-1d, 220FS-1d, 221FS-1d | 0d |  | ud | 1 |

| ID | WBS | Task | Type | Duration | Start | Finish | Predecessors | Total slack | Constraint | Cost |
| --- | --- | --- | --- | --- | --- | --- | --- | --- | --- | --- |
| 240 | 1.8 | **INSTALACIONES** |  | 60d | 2020-08-31 | 2020-11-20 |  | 0d |  | 12,000 |
| 241 | 1.8.1 | INGENIERÍA Y ESTUDIO | manual | 15d | 2020-08-31 | 2020-09-18 |  |  | start no earlier than 2020-08-31 |  |
| 242 | 1.8.2 | SUMINISTRO DE MATERIAL |  | 5d | 2020-10-12 | 2020-10-16 | 241FS+15d | 2d |  |  |
| 243 | 1.8.3 | FONTANERÍA |  | 20d | 2020-10-21 | 2020-11-17 | 242, 175 | 0d |  |  |
| 244 | 1.8.4 | SANEAMIENTO |  | 20d | 2020-10-21 | 2020-11-17 | 242, 175 | 0d |  |  |
| 245 | 1.8.5 | ELECTRICIDAD |  | 20d | 2020-10-21 | 2020-11-17 | 242, 175 | 0d |  |  |
| 246 | 1.8.6 | TELECOMUNICACIONES - VOZ Y DATOS |  | 20d | 2020-10-21 | 2020-11-17 | 242, 175 | 0d |  |  |
| 247 | 1.8.7 | GESTIÓN CENTRALIZADA |  | 20d | 2020-10-21 | 2020-11-17 | 242, 175 | 0d |  |  |
| 248 | 1.8.8 | PROTECCIÓN CONTRA INCENDIOS |  | 20d | 2020-10-21 | 2020-11-17 | 242, 175 | 0d |  |  |
| 249 | 1.8.9 | PRUEBAS DE SERVICIO Y PUESTA EN MARCHA |  | 7d | 2020-11-12 | 2020-11-20 | 245FS-4d, 246FS-4d, 247FS-4d | 0d |  |  |
| 250 | 2 | **ACCESO PROVISIONAL AVE NORTE** |  | 381d | 2020-08-31 | 2022-03-18 |  | 0d |  | 169,500 |
| 251 | 2.1 | **HITOS** |  | 260d | 2020-11-05 | 2021-11-26 |  | 0d |  |  |
| 252 | 2.1.1 | APROBACIÓN ACO ESTRUCTURA ACCESO PROVISIONAL | milestone | 0d | 2020-11-18 | 2020-11-18 | 426SS | 0d |  |  |
| 253 | 2.1.2 | APROBACIÓN ACO LOSA SUPERIOR NORTE N1 | milestone | 0d | 2020-12-28 | 2020-12-28 | 288SS | 0d |  |  |
| 254 | 2.1.3 | APROBACIÓN ACO LOSA SUPERIOR NORTE N2 | milestone | 0d | 2020-11-05 | 2020-11-05 | 298SS | 0d |  |  |
| 255 | 2.1.4 | APROBACIÓN ACO LOSA SUPERIOR NORTE N3 | milestone | 0d | 2020-11-16 | 2020-11-16 | 311SS | 0d |  |  |
| 256 | 2.1.5 | APROBACIÓN ACO LOSA SUPERIOR NORTE N4 | milestone | 0d | 2020-11-27 | 2020-11-27 | 317SS | 0d |  |  |
| 257 | 2.1.6 | APROBACIÓN ACO LOSA SUPERIOR NORTE N5 | milestone | 0d | 2021-04-29 | 2021-04-29 | 322SS | 0d |  |  |
| 258 | 2.1.7 | APROBACIÓN ACO LOSA SUPERIOR C4 | milestone | 0d | 2021-02-24 | 2021-02-24 | 323SS | 0d |  |  |
| 259 | 2.1.8 | APROBACIÓN ACO LOSA INFERIOR NORTE N0 | milestone | 0d | 2021-05-17 | 2021-05-17 | 348SS | 0d |  |  |
| 260 | 2.1.9 | APROBACIÓN ACO LOSA INFERIOR NORTE N1 | milestone | 0d | 2021-06-14 | 2021-06-14 | 349SS | 0d |  |  |
| 261 | 2.1.10 | APROBACIÓN ACO LOSA INFERIOR NORTE N2 | milestone | 0d | 2021-04-19 | 2021-04-19 | 351SS | 0d |  |  |
| 262 | 2.1.11 | APROBACIÓN ACO LOSA INFERIOR NORTE N3 | milestone | 0d | 2021-08-20 | 2021-08-20 | 356SS, 357SS | 0d |  |  |
| 263 | 2.1.12 | APROBACIÓN ACO LOSA INFERIOR NORTE N4 | milestone | 0d | 2021-09-06 | 2021-09-06 | 358SS | 0d |  |  |
| 264 | 2.1.13 | APROBACIÓN ACO LOSA INFERIOR NORTE N5 | milestone | 0d | 2021-08-20 | 2021-08-20 | 360SS | 0d |  |  |
| 265 | 2.1.14 | APROBACIÓN ACO ANCLAJES ACTIVOS | milestone | 0d | 2021-01-28 | 2021-01-28 | 276SS-15d | 0d |  |  |
| 266 | 2.1.15 | PUESTA EN SERVICIO FASE 1C | manual | 4d | 2021-03-05 | 2021-03-10 |  |  |  |  |
| 267 | 2.1.16 | SUMINISTRO DESVÍOS, VÍA Y TRAVIESAS ZONA ALDESA | milestone, manual | 0d | 2021-09-01 | 2021-09-01 |  |  | start no earlier than 2021-09-01 |  |
| 268 | 2.1.17 | SUMINISTRO DESVÍOS, VÍA Y TRAVIESAS VASO NORTE | milestone | 0d | 2021-11-26 | 2021-11-26 | 394SS | 0d |  |  |

| ID | WBS | Task | Type | Duration | Start | Finish | Predecessors | Total slack | Free slack | Cost | Text3 | Text2 |
| --- | --- | --- | --- | --- | --- | --- | --- | --- | --- | --- | --- | --- |
| 269 | 2.2 | **TÚNEL ZONA NORTE** |  | 331d | 2020-08-31 | 2021-12-28 |  | 0d |  | 169,500 |  |  |
| 270 | 2.2.1 | **PANTALLAS** |  | 124d | 2020-11-11 | 2021-05-25 |  | 0d |  |  |  |  |
| 271 | 2.2.1.1 | TAPES |  | 9d | 2020-11-11 | 2020-11-23 | 24FS+4d | 115d |  |  |  |  |
| 272 | 2.2.1.2 | **PIN** |  | 24d | 2021-04-22 | 2021-05-25 |  | 0d |  |  |  |  |
| 273 | 2.2.1.2.1 | PANTALLA INTERMEDIA NORTE PIN BATACHES VÍA ACTUAL |  | 24d | 2021-04-22 | 2021-05-25 | 275 | 0d |  |  | 3200 |  |
| 274 | 2.2.1.3 | **PN** |  | 11d | 2021-04-07 | 2021-04-21 |  | 0d |  |  |  |  |
| 275 | 2.2.1.3.1 | PANTALLA NORTE PN BATACHES VÍA ACTUAL ZONA ANCLADA |  | 11d | 2021-04-07 | 2021-04-21 | 266FS+15d | 0d |  |  | 2300 |  |
| 276 | 2.2.2 | **ANCLAJES ACTIVOS PN** |  | 93d | 2021-02-18 | 2021-07-02 |  | 0d |  |  |  |  |
| 277 | 2.2.2.1 | ANCLAJES ZONA N4 |  | 27d | 2021-02-18 | 2021-03-26 | 319FS+40d | 66d |  |  |  |  |
| 278 | 2.2.2.2 | ANCLAJES ZONA N5 |  | 30d | 2021-05-24 | 2021-07-02 | 322FS+5d | 0d |  |  |  |  |
| 279 | 2.2.3 | **SUBESTRUCTURA N1 N2 N3 Y N4** |  | 159d | 2020-08-31 | 2021-04-30 |  | 0d |  |  |  |  |
| 280 | 2.2.3.1 | PILOTES (SIN AFECTAR A VIA EN SERVICIO) |  | 23d | 2020-09-02 | 2020-10-02 | 31 | 119d | 0d |  | 34 |  |
| 281 | 2.2.3.2 | PILOTES (VÍA ACTUAL) |  | 8d | 2021-04-21 | 2021-04-30 | 273SS-1d, 266FS-1d | 0d |  |  | 6 |  |
| 282 | 2.2.3.3 | PILAS RECTANGULARES N1 |  | 6d | 2020-08-31 | 2020-09-07 | 33FS+1d | 0d |  |  | 4 |  |
| 283 | 2.2.3.4 | PILOTES N4 |  | 10d | 2020-10-12 | 2020-10-23 | 280FS+5d | 119d |  |  | 6 |  |
| 284 | 2.2.4 | **CORTE CON HILO - DEMOLICIÓN** |  | 30d | 2021-01-13 | 2021-02-23 |  | 0d |  |  |  |  |
| 285 | 2.2.4.1 | ZONA N4 | manual | 20d | 2021-01-13 | 2021-02-09 |  |  |  |  |  |  |
| 286 | 2.2.4.2 | ZONA C4 |  | 20d | 2021-01-27 | 2021-02-23 | 285FS-10d | 0d |  |  |  |  |
| 287 | 2.2.5 | **LOSAS SUPERIORES** |  | 170d | 2020-11-05 | 2021-07-22 |  | 0d |  | 169,500 |  |  |
| 288 | 2.2.5.1 | **LOSA N1** |  | 135d | 2020-12-28 | 2021-07-22 |  | 0d |  | 67,500 |  |  |
| 289 | 2.2.5.1.1 | LOSA N1-01 (EXC, HL, ENCOF, FERRALLADO Y HORMIGONADO) | manual | 7d | 2020-12-28 | 2021-01-18 |  |  |  | 10,200 | 380 | m² |
| 290 | 2.2.5.1.2 | LOSA N1-02 (EXC, HL, ENCOF, FERRALLADO Y HORMIGONADO) |  | 7d | 2021-01-19 | 2021-01-27 | 289 | 122d |  | 35,700 | 280 | m² |
| 291 | 2.2.5.1.3 | LOSA N1-03 (EXC, HL, ENCOF, FERRALLADO Y HORMIGONADO) |  | 7d | 2021-02-05 | 2021-02-15 | 295FS-4d | 106d | 0d | 21,600 | 210 | m² |
| 292 | 2.2.5.1.4 | LOSA N1-04 (EXC, HL, ENCOF, FERRALLADO Y HORMIGONADO) |  | 7d | 2021-02-10 | 2021-02-18 | 291FS-4d | 106d |  |  | 380 | m² |
| 293 | 2.2.5.1.5 | LOSA N1-05 (EXC, HL, ENCOF, FERRALLADO Y HORMIGONADO) |  | 7d | 2021-01-22 | 2021-02-01 | 289FS+3d | 106d | 0d |  | 290 | m² |
| 294 | 2.2.5.1.6 | LOSA N1-06 (EXC, HL, ENCOF, FERRALLADO Y HORMIGONADO) |  | 8d | 2021-01-26 | 2021-02-04 | 293FS-5d | 106d | 0d |  | 250 | m² |
| 295 | 2.2.5.1.7 | LOSA N1-07 (EXC, HL, ENCOF, FERRALLADO Y HORMIGONADO) |  | 8d | 2021-02-01 | 2021-02-10 | 293FS-4d, 294FS-4d | 106d | 0d |  | 270 | m² |
| 296 | 2.2.5.1.8 | LOSA N1-08 (EXC, HL, ENCOF, FERRALLADO Y HORMIGONADO) |  | 4d | 2021-07-19 | 2021-07-22 | 348FS-5d, 349FS-5d | 0d |  |  | 260 | m² |
| 297 | 2.2.5.1.9 | LOSA N1-09 (EXC, HL, ENCOF, FERRALLADO Y HORMIGONADO) |  | 4d | 2021-07-19 | 2021-07-22 | 348FS-5d, 349FS-5d | 0d |  |  | 210 | m² |

| ID | WBS | Task | Type | Duration | Start | Finish | Predecessors | Total slack | Cost | Text2 | Text3 |
| --- | --- | --- | --- | --- | --- | --- | --- | --- | --- | --- | --- |
| 298 | 2.2.5.2 | **LOSA N2** |  | 60d | 2020-11-05 | 2021-02-12 |  | 0d | 56,100 |  |  |
| 299 | 2.2.5.2.1 | LOSA N2-01 (EXC, HL, ENCOF, FERRALLADO Y HORMIGONADO) |  | 8d | 2020-12-01 | 2020-12-10 | 303FS+4d | 34d |  | m² | 380 |
| 300 | 2.2.5.2.2 | LOSA N2-02 (EXC, HL, ENCOF, FERRALLADO Y HORMIGONADO) | manual | 8d | 2020-11-06 | 2020-11-17 |  |  |  | m² | 330 |
| 301 | 2.2.5.2.3 | LOSA N2-03 (EXC, HL, ENCOF, FERRALLADO Y HORMIGONADO) | manual | 8d | 2020-11-05 | 2020-11-16 |  |  |  | m² | 3200 |
| 302 | 2.2.5.2.4 | LOSA N2-04 (EXC, HL, ENCOF, FERRALLADO Y HORMIGONADO) |  | 8d | 2020-12-02 | 2020-12-11 | 303FS+5d | 0d |  | m² | 260 |
| 303 | 2.2.5.2.5 | LOSA N2-05 (EXC, HL, ENCOF, FERRALLADO Y HORMIGONADO) |  | 7d | 2020-11-16 | 2020-11-24 | 300FS-2d, 301FS-2d | 0d |  | m² | 300 |
| 304 | 2.2.5.2.6 | LOSA N2-06 (EXC, HL, ENCOF, FERRALLADO Y HORMIGONADO) |  | 7d | 2020-12-10 | 2020-12-18 | 302FS-2d | 28d |  | m² | 280 |
| 305 | 2.2.5.2.7 | LOSA N2-07 (EXC, HL, ENCOF, FERRALLADO Y HORMIGONADO) |  | 7d | 2020-12-16 | 2021-01-11 | 302FS+2d | 24d |  | m² | 270 |
| 306 | 2.2.5.2.8 | LOSA N2-08 (EXC, HL, ENCOF, FERRALLADO Y HORMIGONADO) |  | 7d | 2020-12-22 | 2021-01-15 | 302FS+6d | 20d |  | m² | 220 |
| 307 | 2.2.5.2.9 | LOSA N2-09 (EXC, HL, ENCOF, FERRALLADO Y HORMIGONADO) |  | 7d | 2020-12-22 | 2021-01-15 | 302FS+6d | 0d | 10,200 | m² | 190 |
| 308 | 2.2.5.2.10 | LOSA N2-10 (EXC, HL, ENCOF, FERRALLADO Y HORMIGONADO) |  | 7d | 2021-02-04 | 2021-02-12 | 310FS-2d | 0d | 10,200 | m² | 110 |
| 309 | 2.2.5.2.11 | LOSA N2-11 (EXC, HL, ENCOF, FERRALLADO Y HORMIGONADO) |  | 7d | 2021-01-19 | 2021-01-27 | 307FS+1d, 302FS+1d | 0d | 35,700 | m² | 110 |
| 310 | 2.2.5.2.12 | LOSA N2-12 (EXC, HL, ENCOF, FERRALLADO Y HORMIGONADO) |  | 7d | 2021-01-28 | 2021-02-05 | 303, 309 | 0d |  | m² | 130 |
| 311 | 2.2.5.3 | **LOSA N3** |  | 132d | 2020-11-16 | 2021-06-09 |  | 0d |  |  |  |
| 312 | 2.2.5.3.1 | LOSA N3-01 (EXC, HL, ENCOF, FERRALLADO Y HORMIGONADO) | manual | 8d | 2020-11-16 | 2020-11-25 |  |  |  |  |  |
| 313 | 2.2.5.3.2 | LOSA N3-02 (EXC, HL, ENCOF, FERRALLADO Y HORMIGONADO) |  | 8d | 2021-02-15 | 2021-02-24 | 298 | 71d |  |  |  |
| 314 | 2.2.5.3.3 | LOSA N3-03 (EXC, HL, ENCOF, FERRALLADO Y HORMIGONADO) |  | 7d | 2021-06-01 | 2021-06-09 | 316FS-1d, 273FS-12d, 275FS-12d | 0d |  |  |  |
| 315 | 2.2.5.3.4 | LOSA N3-04 (EXC, HL, ENCOF, FERRALLADO Y HORMIGONADO) |  | 8d | 2021-05-12 | 2021-05-21 | 273FS-10d | 0d |  |  |  |
| 316 | 2.2.5.3.5 | LOSA N3-05 (EXC, HL, ENCOF, FERRALLADO Y HORMIGONADO) |  | 7d | 2021-05-24 | 2021-06-01 | 315 | 0d |  |  |  |
| 317 | 2.2.5.4 | **LOSA N4** |  | 53d | 2020-11-27 | 2021-02-25 |  | 0d | 45,900 |  |  |
| 318 | 2.2.5.4.1 | LOSA N4-01 (EXC, HL, ENCOF, FERRALLADO Y HORMIGONADO) |  | 7d | 2020-12-10 | 2020-12-18 | 319FS+2d | 19d |  | m² | 600 |
| 319 | 2.2.5.4.2 | LOSA N4-02 (EXC, HL, ENCOF, FERRALLADO Y HORMIGONADO) | manual | 7d | 2020-11-27 | 2020-12-07 |  |  |  | m² | 400 |
| 320 | 2.2.5.4.3 | LOSA N4-03 (EXC, HL, ENCOF, FERRALLADO Y HORMIGONADO) |  | 7d | 2021-02-17 | 2021-02-25 | 321FS-2d, 285 | 0d | 10,200 | m² | 600 |
| 321 | 2.2.5.4.4 | LOSA N4-04 (EXC, HL, ENCOF, FERRALLADO Y HORMIGONADO) |  | 7d | 2021-02-10 | 2021-02-18 | 318FS+6d, 285 | 0d | 35,700 | m² | 400 |
| 322 | 2.2.5.5 | LOSA N5 |  | 12d | 2021-04-29 | 2021-05-14 | 273SS+5d, 275FS+5d | 0d |  |  |  |

| ID | WBS | Task | Type | Duration | Start | Finish | Predecessors | Total slack | Text3 | Text2 |
| --- | --- | --- | --- | --- | --- | --- | --- | --- | --- | --- |
| 323 | 2.2.5.6 | **LOSA C4** |  | 13d | 2021-02-24 | 2021-03-12 |  | 0d |  |  |
| 324 | 2.2.5.6.1 | LOSA C4-01 (EXC, HL, ENCOF, FERRALLADO Y HORMIGONADO) |  | 7d | 2021-03-04 | 2021-03-12 | 286, 325FS-5d | 0d |  |  |
| 325 | 2.2.5.6.2 | LOSA C4-02 (EXC, HL, ENCOF, FERRALLADO Y HORMIGONADO) |  | 7d | 2021-03-02 | 2021-03-10 | 286, 326FS-5d | 0d |  |  |
| 326 | 2.2.5.6.3 | LOSA C4-03 (EXC, HL, ENCOF, FERRALLADO Y HORMIGONADO) |  | 7d | 2021-02-26 | 2021-03-08 | 286, 327FS-5d | 0d |  |  |
| 327 | 2.2.5.6.4 | LOSA C4-04 (EXC, HL, ENCOF, FERRALLADO Y HORMIGONADO) |  | 7d | 2021-02-24 | 2021-03-04 | 286 | 0d |  |  |
| 328 | 2.2.6 | **MOVIMIENTO DE TIERRAS** |  | 201d | 2021-02-15 | 2021-11-26 |  | 0d |  |  |
| 329 | 2.2.6.1 | ZONA NORTE N0 |  | 17d | 2021-04-22 | 2021-05-14 | 330FS-1d | 0d | 12000 |  |
| 330 | 2.2.6.2 | ZONA NORTE N1-1_2_5_6_7 |  | 45d | 2021-02-15 | 2021-04-22 | 298 | 0d | 12000 | m³ |
| 331 | 2.2.6.3 | ZONA NORTE N1-3_4_8_9 |  | 30d | 2021-08-02 | 2021-09-10 | 296FS+6d, 297FS+6d | 0d |  |  |
| 332 | 2.2.6.4 | ZONA NORTE N2-1_2_6_7 |  | 40d | 2021-02-15 | 2021-04-15 | 298 | 0d |  |  |
| 333 | 2.2.6.5 | ZONA NORTE N2-3 |  | 9d | 2021-08-23 | 2021-09-02 | 331FS-15d | 0d |  |  |
| 334 | 2.2.6.6 | ZONA NORTE N2-4_5 |  | 11d | 2021-09-15 | 2021-09-29 | 333FS+8d | 0d |  |  |
| 335 | 2.2.6.7 | ZONA NORTE N2-8_9_10 |  | 6d | 2021-10-20 | 2021-10-27 | 352, 353, 355 | 0d |  |  |
| 336 | 2.2.6.8 | ZONA NORTE N2-11_12 |  | 11d | 2021-09-15 | 2021-09-29 | 334SS | 0d |  |  |
| 337 | 2.2.6.9 | ZONA NORTE N3-1_4 |  | 35d | 2021-06-21 | 2021-08-06 | 311FS+7d | 0d |  |  |
| 338 | 2.2.6.10 | ZONA NORTE N3-2_3_5 |  | 35d | 2021-06-21 | 2021-08-06 | 311FS+7d | 0d | 50000 | m³ |
| 339 | 2.2.6.11 | ZONA NORTE N4-1_2 |  | 35d | 2021-07-19 | 2021-09-03 | 278FS+10d | 0d |  |  |
| 340 | 2.2.6.12 | ZONA NORTE N4-3_4 |  | 35d | 2021-07-19 | 2021-09-03 | 339SS | 0d |  |  |
| 341 | 2.2.6.13 | ZONA NORTE N5 |  | 15d | 2021-07-19 | 2021-08-06 | 278FS+10d | 20d |  |  |
| 342 | 2.2.6.14 | DEMOLICIÓN PANTALLA COMPARTIMENTACIÓN 1 | milestone | 0d | 2021-08-02 | 2021-08-02 | 331SS | 0d |  |  |
| 343 | 2.2.6.15 | DEMOLICIÓN PANTALLA COMPARTIMENTACIÓN 2A | milestone | 0d | 2021-09-02 | 2021-09-02 | 333 | 0d |  |  |
| 344 | 2.2.6.16 | DEMOLICIÓN PANTALLA COMPARTIMENTACIÓN 2B | milestone | 0d | 2021-10-06 | 2021-10-06 | 336FS+5d | 0d |  |  |
| 345 | 2.2.6.17 | DEMOLICIÓN PANTALLA COMPARTIMENTACIÓN ALDESA | milestone | 0d | 2021-09-15 | 2021-09-15 | 339FS+8d, 340FS+8d | 0d |  |  |
| 346 | 2.2.6.18 | REVESTIMIENTO/LIMPIEZA DE PANTALLAS |  | 105d | 2021-07-05 | 2021-11-26 | 270FS+28d | 0d |  |  |

| ID | WBS | Task | Type | Duration | Start | Finish | Predecessors | Total slack | Constraint |
| --- | --- | --- | --- | --- | --- | --- | --- | --- | --- |
| 347 | 2.2.7 | **LOSA INFERIOR** |  | 144d | 2021-04-19 | 2021-11-04 |  | 0d |  |
| 348 | 2.2.7.1 | ZONA NORTE N0 |  | 20d | 2021-05-17 | 2021-06-11 | 329 | 0d |  |
| 349 | 2.2.7.2 | ZONA NORTE N1-1_2_5_6_7 |  | 30d | 2021-06-14 | 2021-07-23 | 348 | 0d |  |
| 350 | 2.2.7.3 | ZONA NORTE N1-3_4_8_9 |  | 14d | 2021-09-13 | 2021-09-30 | 331 | 0d |  |
| 351 | 2.2.7.4 | ZONA NORTE N2-1_2_6_7 |  | 25d | 2021-04-19 | 2021-05-21 | 332FS+1d | 0d |  |
| 352 | 2.2.7.5 | ZONA NORTE N2-3 |  | 14d | 2021-09-30 | 2021-10-19 | 333FS+4d, 334, 336 | 0d |  |
| 353 | 2.2.7.6 | ZONA NORTE N2-4_5 |  | 14d | 2021-09-30 | 2021-10-19 | 334, 336 | 0d |  |
| 354 | 2.2.7.7 | ZONA NORTE N2-8_9_10 |  | 6d | 2021-10-28 | 2021-11-04 | 335 | 0d |  |
| 355 | 2.2.7.8 | ZONA NORTE N2-11_12 |  | 14d | 2021-09-30 | 2021-10-19 | 336 | 0d |  |
| 356 | 2.2.7.9 | ZONA NORTE N3-1_4 |  | 7d | 2021-08-20 | 2021-08-30 | 357FS-4d | 0d |  |
| 357 | 2.2.7.10 | ZONA NORTE N3-2_3_5 |  | 14d | 2021-08-06 | 2021-08-25 | 338FS-1d, 337FS-1d | 0d |  |
| 358 | 2.2.7.11 | ZONA NORTE N4-1_3 |  | 8d | 2021-09-06 | 2021-09-15 | 339, 340, 341 | 0d |  |
| 359 | 2.2.7.12 | ZONA NORTE N4-2_4 |  | 11d | 2021-09-16 | 2021-09-30 | 340, 341, 339, 358 | 25d |  |
| 360 | 2.2.7.13 | ZONA NORTE N5 |  | 6d | 2021-08-20 | 2021-08-27 | 357FS-4d | 0d |  |
| 361 | 2.2.8 | **VÍA, ANDENES Y ACABADOS** |  | 74d | 2021-09-16 | 2021-12-28 |  | 0d |  |
| 362 | 2.2.8.1 | TOPERAS |  | 23d | 2021-11-26 | 2021-12-28 | 394SS | 0d |  |
| 363 | 2.2.8.2 | **INFRAESTRUCTURA VÍA** |  | 50d | 2021-09-17 | 2021-11-25 |  | 0d |  |
| 364 | 2.2.8.2.1 | APROBACIÓN DISEÑO TIPO MANTA | milestone | 0d | 2021-09-17 | 2021-09-17 | 367SS-15d | 0d |  |
| 365 | 2.2.8.2.2 | **ZONA ALDESA** |  | 10d | 2021-10-01 | 2021-10-14 |  | 0d |  |
| 366 | 2.2.8.2.2.1 | PAQUETE HA30 FIBRAS 1 |  | 5d | 2021-10-01 | 2021-10-07 | 374FS+1d | 0d |  |
| 367 | 2.2.8.2.2.2 | MANTA ELASTOMÉRICA |  | 5d | 2021-10-08 | 2021-10-14 | 366 | 0d | finish no earlier than 2021-10-07 |
| 368 | 2.2.8.2.2.3 | PAQUETE HA30 FIBRAS 2 |  | 5d | 2021-10-08 | 2021-10-14 | 366 | 0d |  |
| 369 | 2.2.8.2.3 | **VASO NORTE** |  | 28d | 2021-10-19 | 2021-11-25 |  | 0d |  |
| 370 | 2.2.8.2.3.1 | PAQUETE HA30 FIBRAS 1 |  | 15d | 2021-10-19 | 2021-11-08 | 408SS+12d | 0d |  |
| 371 | 2.2.8.2.3.2 | MANTA ELASTOMÉRICA |  | 13d | 2021-11-09 | 2021-11-25 | 370 | 0d |  |
| 372 | 2.2.8.2.3.3 | PAQUETE HA30 FIBRAS 2 |  | 13d | 2021-11-09 | 2021-11-25 | 370 | 0d |  |

| ID | WBS | Task | Duration | Start | Finish | Predecessors | Total slack |
| --- | --- | --- | --- | --- | --- | --- | --- |
| 373 | 2.2.8.3 | **VÍA EN PLACA** | 74d | 2021-09-16 | 2021-12-28 |  | 0d |
| 374 | 2.2.8.3.1 | PICADO LOSA ZONA ALDESA | 10d | 2021-09-16 | 2021-09-29 | 345 | 0d |
| 375 | 2.2.8.3.2 | RECEPCIÓN DESVÍOS JCA20-21 Y CARRIL/TRAVIESAS ZONA ALDESA | 5d | 2021-10-15 | 2021-10-21 | 365 | 0d |
| 376 | 2.2.8.3.3 | REPARTO TRAVIESAS Y CARRIL ZONA ALDESA | 5d | 2021-10-22 | 2021-10-28 | 375, 365 | 0d |
| 377 | 2.2.8.3.4 | HORMIGONADO DESVÍOS JCA24-25 | 10d | 2021-10-29 | 2021-11-11 | 376 | 0d |
| 378 | 2.2.8.3.5 | MONTAJE Y HORMIGONADO DESVÍOS JCA17-20 | 10d | 2021-11-12 | 2021-11-25 | 377 | 0d |
| 379 | 2.2.8.3.6 | RECEPCIÓN RESTO DESVÍOS Y CARRIL/TRAVIESAS VASO NORTE | 5d | 2021-11-26 | 2021-12-02 | 394SS | 0d |
| 380 | 2.2.8.3.7 | REPARTO TRAVIESAS Y CARRIL VASO NORTE | 7d | 2021-11-26 | 2021-12-06 | 394SS | 0d |
| 381 | 2.2.8.3.8 | MONTAJE Y HORMIGONADO RESTO DESVÍOS VASO NORTE | 16d | 2021-12-03 | 2021-12-24 | 379 | 0d |
| 382 | 2.2.8.3.9 | **MONTAJE VÍA EN PLACA CONEXIÓN ALDESA** | 27d | 2021-10-22 | 2021-11-29 |  | 0d |
| 383 | 2.2.8.3.9.1 | COLOCACIÓN ARMADURA INFERIOR | 27d | 2021-10-22 | 2021-11-29 | 376SS | 0d |
| 384 | 2.2.8.3.9.2 | PUESTAS A TIERRA | 27d | 2021-10-22 | 2021-11-29 | 376SS | 0d |
| 385 | 2.2.8.3.9.3 | CORRIDO CARRILES | 27d | 2021-10-22 | 2021-11-29 | 376SS | 0d |
| 386 | 2.2.8.3.9.4 | COLOCACIÓN TRAVIESAS | 27d | 2021-10-22 | 2021-11-29 | 376SS | 0d |
| 387 | 2.2.8.3.9.5 | CLAVADO CARRIL | 27d | 2021-10-22 | 2021-11-29 | 376SS | 0d |
| 388 | 2.2.8.3.9.6 | MONTAJE PARRILLA SUPERIOR, SEPARADORES AISLANTES Y CABILLAS | 12d | 2021-11-12 | 2021-11-29 | 378SS | 0d |
| 389 | 2.2.8.3.9.7 | HUSILLOS, POSICIONADO DE VÍA Y REATADO ARMADURA INFERIOR | 27d | 2021-10-22 | 2021-11-29 | 376SS | 0d |
| 390 | 2.2.8.3.9.8 | LEVANTAMIENTO ARMADURA INFERIOR Y SEPARADORES | 27d | 2021-10-22 | 2021-11-29 | 376SS | 0d |
| 391 | 2.2.8.3.9.9 | NIVELACIÓN VÍA | 27d | 2021-10-22 | 2021-11-29 | 376SS | 0d |
| 392 | 2.2.8.3.9.10 | ENCOFRADO Y HORMIGONADO | 27d | 2021-10-22 | 2021-11-29 | 376SS | 0d |
| 393 | 2.2.8.3.9.11 | SOLDADURAS Y HOMOGENEIZACIÓN | 12d | 2021-11-12 | 2021-11-29 | 378SS | 0d |
| 394 | 2.2.8.3.10 | **MONTAJE VÍA EN PLACA VASO NORTE** | 23d | 2021-11-26 | 2021-12-28 |  | 0d |
| 395 | 2.2.8.3.10.1 | COLOCACIÓN ARMADURA INFERIOR | 23d | 2021-11-26 | 2021-12-28 | 372 | 0d |
| 396 | 2.2.8.3.10.2 | PUESTAS A TIERRA | 23d | 2021-11-26 | 2021-12-28 | 372 | 0d |
| 397 | 2.2.8.3.10.3 | CORRIDO CARRILES | 23d | 2021-11-26 | 2021-12-28 | 372 | 0d |
| 398 | 2.2.8.3.10.4 | COLOCACIÓN TRAVIESAS | 23d | 2021-11-26 | 2021-12-28 | 372 | 0d |
| 399 | 2.2.8.3.10.5 | CLAVADO CARRIL | 23d | 2021-11-26 | 2021-12-28 | 372 | 0d |
| 400 | 2.2.8.3.10.6 | MONTAJE PARRILLA SUPERIOR, SEPARADORES AISLANTES Y CABILLAS | 23d | 2021-11-26 | 2021-12-28 | 372 | 0d |
| 401 | 2.2.8.3.10.7 | HUSILLOS, POSICIONADO DE VÍA Y REATADO ARMADURA INFERIOR | 23d | 2021-11-26 | 2021-12-28 | 372 | 0d |
| 402 | 2.2.8.3.10.8 | LEVANTAMIENTO ARMADURA INFERIOR Y SEPARADORES | 23d | 2021-11-26 | 2021-12-28 | 372 | 0d |
| 403 | 2.2.8.3.10.9 | NIVELACIÓN VÍA | 23d | 2021-11-26 | 2021-12-28 | 372 | 0d |
| 404 | 2.2.8.3.10.10 | ENCOFRADO Y HORMIGONADO | 23d | 2021-11-26 | 2021-12-28 | 372 | 0d |
| 405 | 2.2.8.3.10.11 | SOLDADURAS Y HOMOGENEIZACIÓN | 23d | 2021-11-26 | 2021-12-28 | 372 | 0d |

| ID | WBS | Task | Type | Duration | Start | Finish | Predecessors | Total slack | Text2 | Text3 |
| --- | --- | --- | --- | --- | --- | --- | --- | --- | --- | --- |
| 406 | 2.2.8.4 | **ANDENES** |  | 73d | 2021-09-17 | 2021-12-28 |  | 0d |  |  |
| 407 | 2.2.8.4.1 | APROBACIÓN DISEÑO ANDENES | milestone | 0d | 2021-09-17 | 2021-09-17 | 408SS-10d | 73d |  |  |
| 408 | 2.2.8.4.2 | ZONA N0 |  | 63d | 2021-10-01 | 2021-12-28 | 348, 349, 350 | 0d | m² | 700 |
| 409 | 2.2.8.4.3 | ZONA NORTE N1-1_2_5_6_7 |  | 63d | 2021-10-01 | 2021-12-28 | 348, 349, 350 | 0d |  |  |
| 410 | 2.2.8.4.4 | ZONA NORTE N1-3_4_8_9 |  | 63d | 2021-10-01 | 2021-12-28 | 348, 349, 350 | 0d | m² | 1100 |
| 411 | 2.2.8.4.5 | ZONA NORTE N2-1_2_6_7 |  | 63d | 2021-10-01 | 2021-12-28 | 351, 348, 349, 350 | 0d |  |  |
| 412 | 2.2.8.4.6 | ZONA NORTE N2-3 |  | 38d | 2021-11-05 | 2021-12-28 | 352, 355, 353, 351, 354 | 0d |  |  |
| 413 | 2.2.8.4.7 | ZONA NORTE N2-4_5 |  | 50d | 2021-10-20 | 2021-12-28 | 356, 357, 408SS, 336, 353 | 0d |  |  |
| 414 | 2.2.8.4.8 | ZONA NORTE N2-8_9_10 |  | 38d | 2021-11-05 | 2021-12-28 | 355, 353, 351, 352, 354 | 0d | m² | 1600 |
| 415 | 2.2.8.4.9 | ZONA NORTE N2-11_12 |  | 50d | 2021-10-20 | 2021-12-28 | 356, 357, 408SS, 336, 353 | 0d | m² | 1600 |
| 416 | 2.2.8.4.10 | ZONA NORTE N3-1_4 |  | 63d | 2021-10-01 | 2021-12-28 | 356, 357, 408SS | 0d |  |  |
| 417 | 2.2.8.4.11 | ZONA NORTE N3-2_3_5 |  | 63d | 2021-10-01 | 2021-12-28 | 357, 356, 408SS | 0d | m² | 650 |
| 418 | 2.2.8.4.12 | INSTALACIONES Y DRENAJE |  | 63d | 2021-10-01 | 2021-12-28 | 348, 349, 350 | 0d |  |  |
| 419 | 2.2.8.4.13 | ACABADOS |  | 20d | 2021-12-01 | 2021-12-28 | 408SS-20d, 409FS-20d, 410FS-20d, 411FS-20d, 413FS-20d, 414FS-20d, 416FS-20d, 417FS-20d, 415FS-20d, 412FS-20d | 0d |  |  |
| 420 | 2.2.8.5 | **SALIDAS DE EMERGENCIA** |  | 38d | 2021-11-05 | 2021-12-28 |  | 0d |  |  |
| 421 | 2.2.8.5.1 | SE N1-5 |  | 38d | 2021-11-05 | 2021-12-28 | 412SS | 0d |  |  |
| 422 | 2.2.8.5.2 | SE N1-8 |  | 38d | 2021-11-05 | 2021-12-28 | 412SS | 0d |  |  |
| 423 | 2.2.8.5.3 | SE N2-8 |  | 38d | 2021-11-05 | 2021-12-28 | 412SS | 0d |  |  |
| 424 | 2.2.8.5.4 | SE N2-12 |  | 38d | 2021-11-05 | 2021-12-28 | 412SS | 0d |  |  |
| 425 | 2.2.8.5.5 | SE N3-5 |  | 38d | 2021-11-05 | 2021-12-28 | 412SS | 0d |  |  |
| 426 | 2.3 | **ACCESO PROVISIONAL ALTA VELOCIDAD SOTERRADA** |  | 324d | 2020-11-18 | 2022-03-18 |  | 0d |  |  |
| 427 | 2.3.1 | **TRABAJOS PREVIOS** |  | 5d | 2020-11-18 | 2020-11-24 |  | 0d |  |  |
| 428 | 2.3.1.1 | TRABAJOS PREVIOS |  | 5d | 2020-11-18 | 2020-11-24 | 125FS+18d | 0d |  |  |
| 429 | 2.3.2 | **MOVIMIENTO DE TIERRAS** |  | 16d | 2020-11-25 | 2020-12-16 |  | 0d |  |  |
| 430 | 2.3.2.1 | LIMPIEZA Y RETIRADA DE VARIOS (AMPL.LOSA) |  | 3d | 2020-11-25 | 2020-11-27 | 428 | 0d |  |  |
| 431 | 2.3.2.2 | RETIRADA DE PAVIMENTACION Y ASFALTO EXISTENTE (AMPL.LOSA) |  | 6d | 2020-11-30 | 2020-12-07 | 430 | 0d |  |  |
| 432 | 2.3.2.3 | EXCAVACIÓN LOSA (AMPL.LOSA) |  | 5d | 2020-12-08 | 2020-12-14 | 431 | 0d |  |  |
| 433 | 2.3.2.4 | RELLENO ZAHORRA COMPACTADA (AMPL.LOSA) |  | 2d | 2020-12-15 | 2020-12-16 | 432 | 0d |  |  |

| ID | WBS | Task | Duration | Start | Finish | Predecessors | Total slack | Free slack |
| --- | --- | --- | --- | --- | --- | --- | --- | --- |
| 434 | 2.3.3 | **CIMENTACIÓN** | 57d | 2021-01-18 | 2021-04-12 |  | 0d |  |
| 435 | 2.3.3.1 | ZAPATAS | 12d | 2021-01-18 | 2021-02-02 | 433FS+10d | 0d |  |
| 436 | 2.3.3.2 | ENCEPADO DE LOSA MACIZA HORMIGÓN ARMADO (AMPL.LOSA) | 8d | 2021-02-19 | 2021-03-02 | 437 | 5d | 0d |
| 437 | 2.3.3.3 | CONECTORES DE LOSA A MURO PERIMETRAL (AMPL.LOSA) | 12d | 2021-02-03 | 2021-02-18 | 435 | 5d | 0d |
| 438 | 2.3.3.4 | MURO DE CONTENCION. PERIMETRO EDÍCULO | 20d | 2021-03-10 | 2021-04-12 | 435FS+25d, 436, 437 | 0d |  |
| 439 | 2.3.4 | **ESTRUCTURA** | 94d | 2021-03-03 | 2021-07-16 |  | 0d |  |
| 440 | 2.3.4.1 | PLACAS DE ANCLAJE (LOSA DE 1 M.) | 3d | 2021-04-13 | 2021-04-15 | 438 | 66d |  |
| 441 | 2.3.4.2 | PLACAS DE ANCLAJE (AMP.LOSA ) | 2d | 2021-03-03 | 2021-03-04 | 436 | 92d |  |
| 442 | 2.3.4.3 | FORJADO SANITARIO | 16d | 2021-04-13 | 2021-05-04 | 438 | 0d |  |
| 443 | 2.3.4.4 | ESTRUCTURA ACERO PERFILES LAMINADOS | 40d | 2021-05-12 | 2021-07-06 | 442FS+5d | 0d |  |
| 444 | 2.3.4.5 | FORJADO COLABORANTE | 8d | 2021-07-07 | 2021-07-16 | 443 | 0d |  |
| 445 | 2.3.5 | **ESCALERA HA ACCESO VASO NORTE** | 10d | 2021-10-01 | 2021-10-14 |  | 93d | 22d |
| 446 | 2.3.5.1 | MURO HA APOYO | 10d | 2021-10-01 | 2021-10-14 | 408SS | 93d |  |
| 447 | 2.3.5.2 | ZANCA Y PELDAÑEADO DE ESCALERA DE HORMIGON | 10d | 2021-10-01 | 2021-10-14 | 408SS | 93d |  |
| 448 | 2.3.6 | **CUBIERTA** | 60d | 2021-07-07 | 2021-09-28 |  | 0d |  |
| 449 | 2.3.6.1 | PETOS CUBIERTA PERIMETRAL | 8d | 2021-07-07 | 2021-07-16 | 444FS-8d | 0d |  |
| 450 | 2.3.6.2 | PETOS LUCERNARIOS | 8d | 2021-07-07 | 2021-07-16 | 444FS-8d | 0d |  |
| 451 | 2.3.6.3 | CUBIERTA LOSA FILTRÓN | 20d | 2021-07-19 | 2021-08-13 | 449, 450 | 0d |  |
| 452 | 2.3.6.4 | CUBIERTA PANEL SANDWICH | 10d | 2021-09-15 | 2021-09-28 | 451FS+22d | 0d |  |
| 453 | 2.3.7 | **ALBAÑILERÍA** | 42d | 2021-08-30 | 2021-10-26 |  | 0d |  |
| 454 | 2.3.7.1 | **MUROS DE CERRAMIENTO TIPO M1** | 42d | 2021-08-30 | 2021-10-26 |  | 0d |  |
| 455 | 2.3.7.1.1 | ESTRUCTURA METÁLICA | 15d | 2021-08-30 | 2021-09-17 | 439FS+30d | 0d |  |
| 456 | 2.3.7.1.2 | PANEL GRC | 15d | 2021-09-20 | 2021-10-08 | 455 | 0d |  |
| 457 | 2.3.7.1.3 | PROYECTADO AISLAMIENTO | 5d | 2021-10-11 | 2021-10-15 | 456 | 0d |  |
| 458 | 2.3.7.1.4 | FÁBRICA DE LADRILLO | 7d | 2021-10-18 | 2021-10-26 | 457 | 0d |  |

| ID | WBS | Task | Duration | Start | Finish | Predecessors | Total slack | Free slack |
| --- | --- | --- | --- | --- | --- | --- | --- | --- |
| 459 | 2.3.7.2 | **DIVISIONES INTERIORES** | 42d | 2021-08-30 | 2021-10-26 |  | 0d |  |
| 460 | 2.3.7.2.1 | ESTRUCTURA METÁLICA | 15d | 2021-08-30 | 2021-09-17 | 455SS | 20d |  |
| 461 | 2.3.7.2.2 | FÁBRICA DE LADRILLO | 7d | 2021-10-18 | 2021-10-26 | 460, 458SS | 0d |  |
| 462 | 2.3.8 | **ELEMENTOS PREFABRICADOS** | 10d | 2021-10-27 | 2021-11-09 |  | 85d |  |
| 463 | 2.3.8.1 | ALBARDILLA PETOS CUBIERTA Y LUCERNARIOS | 5d | 2021-10-27 | 2021-11-02 | 448, 454 | 90d |  |
| 464 | 2.3.8.2 | CORONACIÓN FACHADA PANEL SANDWICH | 10d | 2021-10-27 | 2021-11-09 | 448, 454 | 85d |  |
| 465 | 2.3.9 | **REVESTIMIENTOS Y FALSOS TECHOS** | 85d | 2021-10-27 | 2022-03-04 |  | 0d |  |
| 466 | 2.3.9.1 | ENFOSCADOS | 7d | 2021-10-27 | 2021-11-04 | 458, 461 | 0d |  |
| 467 | 2.3.9.2 | AZULEJOS | 7d | 2021-11-05 | 2021-11-15 | 466 | 0d |  |
| 468 | 2.3.9.3 | FALSOS TECHOS | 10d | 2022-02-21 | 2022-03-04 | 491FS-20d | 10d |  |
| 469 | 2.3.10 | **LUCERNARIOS** | 50d | 2021-12-01 | 2022-02-18 |  | 20d |  |
| 470 | 2.3.10.1 | MURETES | 20d | 2021-12-01 | 2022-01-10 | 471SF | 50d |  |
| 471 | 2.3.10.2 | ESTRUCTURA METÁLICA Y TRAMEX | 30d | 2022-01-10 | 2022-02-18 | 404 | 0d |  |
| 472 | 2.3.10.3 | TAPADO HUECOS | 30d | 2022-01-10 | 2022-02-18 | 404 | 20d |  |
| 473 | 2.3.11 | **SOLADOS** | 10d | 2021-11-16 | 2021-11-29 |  | 56d | 0d |
| 474 | 2.3.11.1 | PAVIMENTOS INTERIOR | 10d | 2021-11-16 | 2021-11-29 | 467 | 56d | 0d |
| 475 | 2.3.11.2 | PELDAÑEADO-SOLADO DE ESCALERA | 5d | 2021-11-16 | 2021-11-22 | 445, 474SS | 71d | 0d |
| 476 | 2.3.12 | CARPINTERÍA DE MADERA | 5d | 2021-11-30 | 2021-12-06 | 473 | 66d |  |
| 477 | 2.3.13 | **CARPINTERÍA DE ALUMINIO** | 20d | 2021-11-02 | 2021-11-29 |  | 10d |  |
| 478 | 2.3.13.1 | MURO CORTINA | 10d | 2021-11-02 | 2021-11-15 | 473SS-10d | 77d | 0d |
| 479 | 2.3.13.2 | LUCERNARIOS | 10d | 2021-11-16 | 2021-11-29 | 480SS | 0d |  |
| 480 | 2.3.13.3 | VENTANAS | 10d | 2021-11-16 | 2021-11-29 | 456, 467 | 0d |  |
| 481 | 2.3.14 | **PUERTAS AUTOMÁTICAS -CERRAJERÍA** | 10d | 2021-11-16 | 2021-11-29 |  | 71d |  |
| 482 | 2.3.14.1 | PUERTAS AUTOMATICAS | 4d | 2021-11-16 | 2021-11-19 | 478 | 77d |  |
| 483 | 2.3.14.2 | TRAMPILLA CUBIERTA | 10d | 2021-11-16 | 2021-11-29 | 479SS | 71d |  |
| 484 | 2.3.14.3 | BARANDILLAS | 5d | 2021-11-23 | 2021-11-29 | 475 | 71d |  |
| 485 | 2.3.15 | PINTURAS | 10d | 2022-02-21 | 2022-03-04 | 491FS-20d | 10d |  |
| 486 | 2.3.16 | SEÑALÉTICA | 30d | 2022-01-31 | 2022-03-11 | 542SS-30d | 5d |  |

| ID | WBS | Task | Type | Duration | Start | Finish | Predecessors | Total slack | Free slack |
| --- | --- | --- | --- | --- | --- | --- | --- | --- | --- |
| 487 | 2.3.17 | **SISTEMAS DE ELEVACIÓN** |  | 63d | 2021-10-01 | 2021-12-28 |  | 45d |  |
| 488 | 2.3.17.1 | FOSOS |  | 5d | 2021-10-01 | 2021-10-07 | 408SS | 81d | 5d |
| 489 | 2.3.17.2 | ASCENSOR Y MONTACARGAS |  | 22d | 2021-10-15 | 2021-11-15 | 488, 408SS+10d | 76d |  |
| 490 | 2.3.17.3 | ESCALERAS MECÁNICAS |  | 10d | 2021-12-15 | 2021-12-28 | 406FS-10d | 45d |  |
| 491 | 2.3.18 | **INSTALACIONES** |  | 220d | 2021-05-05 | 2022-03-18 |  | 10d | 0d |
| 492 | 2.3.18.1 | ACOMETIDAS DESDE EDIFICIO EXISTENTE |  | 30d | 2022-02-07 | 2022-03-18 | 542FS-30d | 10d |  |
| 493 | 2.3.18.2 | **CLIMATIZACIÓN Y RENOVACIÓN DE AIRE** |  | 85d | 2021-09-01 | 2021-12-28 |  | 0d |  |
| 494 | 2.3.18.2.1 | DISEÑO | milestone | 0d | 2021-09-01 | 2021-09-01 | 495SS | 130d |  |
| 495 | 2.3.18.2.2 | SUMINISTRO |  | 20d | 2021-09-01 | 2021-09-28 | 496SS-20d | 0d |  |
| 496 | 2.3.18.2.3 | EQUIPOS CLIMATIZACION |  | 65d | 2021-09-29 | 2021-12-28 | 448 | 0d |  |
| 497 | 2.3.18.2.4 | EQUIPOS VENTILACION |  | 65d | 2021-09-29 | 2021-12-28 | 496SS | 45d |  |
| 498 | 2.3.18.2.5 | DISTRIBUCION DE AIRE |  | 65d | 2021-09-29 | 2021-12-28 | 496SS | 45d |  |
| 499 | 2.3.18.2.6 | DISTRIBUCION LIQUIDO REFRIGERANTE |  | 65d | 2021-09-29 | 2021-12-28 | 496SS | 45d |  |
| 500 | 2.3.18.2.7 | CONTROL |  | 65d | 2021-09-29 | 2021-12-28 | 496SS | 45d | 0d |
| 501 | 2.3.18.2.8 | PRUEBAS, PUESTA EN MARCHA Y DOCUMENTACIÓN |  | 20d | 2021-12-01 | 2021-12-28 | 500FS-20d | 45d |  |
| 502 | 2.3.18.3 | **PROTECCIÓN CONTRA INCENDIOS** |  | 130d | 2021-09-01 | 2022-03-11 |  | 0d |  |
| 503 | 2.3.18.3.1 | DISEÑO | milestone | 0d | 2021-09-01 | 2021-09-01 | 504SS | 0d |  |
| 504 | 2.3.18.3.2 | SUMINISTRO |  | 60d | 2021-09-01 | 2021-11-23 | 505SS-60d | 0d |  |
| 505 | 2.3.18.3.3 | EXTINCIÓN y DETECCIÓN |  | 70d | 2021-11-24 | 2022-03-11 | 406FS-25d | 0d |  |
| 506 | 2.3.18.4 | **FONTANERÍA** |  | 36d | 2021-10-29 | 2021-12-17 |  | 52d |  |
| 507 | 2.3.18.4.1 | DISTRIBUCION GENERAL |  | 36d | 2021-10-29 | 2021-12-17 | 406SS+30d | 52d | 0d |
| 508 | 2.3.18.4.2 | APARATOS SANITARIOS |  | 10d | 2021-11-30 | 2021-12-13 | 467, 474 | 56d |  |
| 509 | 2.3.18.4.3 | PRUEBAS, PUESTA EN MARCHA Y DOCUMENTACIÓN |  | 20d | 2021-11-22 | 2021-12-17 | 507FS-20d | 52d |  |
| 510 | 2.3.18.5 | **SANEAMIENTO** |  | 155d | 2021-05-05 | 2021-12-07 |  | 60d |  |
| 511 | 2.3.18.5.1 | RED HORIZONTAL DE SANEAMIENTO ASEOS, PLUVIALES, CANALETA.. |  | 150d | 2021-05-05 | 2021-11-30 | 442 | 60d | 0d |
| 512 | 2.3.18.5.2 | PRUEBAS, PUESTA EN MARCHA Y DOCUMENTACIÓN |  | 5d | 2021-12-01 | 2021-12-07 | 511 | 60d |  |

| ID | WBS | Task | Type | Duration | Start | Finish | Predecessors | Total slack | Free slack |
| --- | --- | --- | --- | --- | --- | --- | --- | --- | --- |
| 513 | 2.3.18.6 | **INSTALACIÓN ELÉCTRICA** |  | 130d | 2021-09-01 | 2022-03-11 |  | 0d |  |
| 514 | 2.3.18.6.1 | DISEÑO | milestone | 0d | 2021-09-01 | 2021-09-01 | 503SS | 0d |  |
| 515 | 2.3.18.6.2 | SUMINISTRO |  | 50d | 2021-09-01 | 2021-11-09 | 514 | 0d |  |
| 516 | 2.3.18.6.3 | ALUMBRADO, EMERGENCIAS, PTOS LUZ Y TOMAS CORRIENTE |  | 40d | 2021-11-10 | 2022-01-14 | 515 | 0d |  |
| 517 | 2.3.18.6.4 | CUADROS ELECTRICOS |  | 40d | 2022-01-17 | 2022-03-11 | 516 | 0d |  |
| 518 | 2.3.18.6.5 | CABLEADO Y CANALIZACION |  | 80d | 2021-11-10 | 2022-03-11 | 515 | 0d |  |
| 519 | 2.3.18.6.6 | PUESTA A TIERRA |  | 66d | 2021-09-17 | 2021-12-17 | 406SS | 52d |  |
| 520 | 2.3.18.6.7 | PRUEBAS, PUESTA EN MARCHA Y DOCUMENTACIÓN |  | 20d | 2022-02-14 | 2022-03-11 | 517FS-20d, 518FS-20d | 0d |  |
| 521 | 2.3.18.7 | **CCTV Y SEGURIDAD** |  | 130d | 2021-09-01 | 2022-03-11 |  | 0d |  |
| 522 | 2.3.18.7.1 | DISEÑO | milestone | 0d | 2021-09-01 | 2021-09-01 | 503SS | 0d |  |
| 523 | 2.3.18.7.2 | SUMINISTRO |  | 90d | 2021-09-01 | 2022-01-14 | 522 | 0d |  |
| 524 | 2.3.18.7.3 | CCTV |  | 40d | 2022-01-17 | 2022-03-11 | 523 | 0d |  |
| 525 | 2.3.18.7.4 | PROTECCION CONTRA INTRUSION |  | 40d | 2022-01-17 | 2022-03-11 | 523 | 0d |  |
| 526 | 2.3.18.7.5 | CONTROL DE ACCESOS |  | 40d | 2022-01-17 | 2022-03-11 | 523 | 0d |  |
| 527 | 2.3.18.7.6 | CONTEO DE PERSONAS |  | 40d | 2022-01-17 | 2022-03-11 | 523 | 0d |  |
| 528 | 2.3.18.8 | **TELECOMUNICACIONES - VOZ Y DATOS** |  | 118d | 2021-09-01 | 2022-02-23 |  | 12d |  |
| 529 | 2.3.18.8.1 | DISEÑO | milestone | 0d | 2021-09-01 | 2021-09-01 | 503SS | 12d | 0d |
| 530 | 2.3.18.8.2 | SUMINISTRO |  | 30d | 2021-09-01 | 2021-10-12 | 529 | 12d | 0d |
| 531 | 2.3.18.8.3 | RED ESTRUCTURADA |  | 88d | 2021-10-13 | 2022-02-23 | 530 | 12d |  |
| 532 | 2.3.18.8.4 | TELEVISION |  | 88d | 2021-10-13 | 2022-02-23 | 530 | 12d |  |
| 533 | 2.3.18.8.5 | SISTEMA DE INFORMACION AL VIAJERO |  | 88d | 2021-10-13 | 2022-02-23 | 530 | 12d |  |
| 534 | 2.3.18.8.6 | MEGAFONIA, CRONOMETRÍA E INTERFONIA |  | 88d | 2021-10-13 | 2022-02-23 | 530 | 12d |  |
| 535 | 2.3.18.9 | **GESTIÓN CENTRALIZADA** |  | 120d | 2021-09-01 | 2022-02-25 |  | 10d |  |
| 536 | 2.3.18.9.1 | DISEÑO | milestone | 0d | 2021-09-01 | 2021-09-01 | 503SS | 10d | 0d |
| 537 | 2.3.18.9.2 | SUMINISTRO |  | 60d | 2021-09-01 | 2021-11-23 | 536 | 10d | 0d |
| 538 | 2.3.18.9.3 | INSTALACIÓN |  | 60d | 2021-11-24 | 2022-02-25 | 537 | 10d |  |

| ID | WBS | Task | Type | Duration | Start | Finish | Predecessors | Total slack | Constraint |
| --- | --- | --- | --- | --- | --- | --- | --- | --- | --- |
| 539 | 2.3.18.10 | **PUESTA EN MARCHA DEL CONJUNTO DE LAS INSTALACIONES** |  | 15d | 2022-02-28 | 2022-03-18 |  | 0d |  |
| 540 | 2.3.18.10.1 | PUESTA EN MARCHA DE LAS INSTALACIONES |  | 10d | 2022-02-28 | 2022-03-11 | 493FS-10d, 502FS-10d, 506FS-10d, 510FS-10d, 513FS-10d, 521FS-10d, 528FS-10d, 535FS-10d, 487FS-10d | 0d |  |
| 541 | 2.3.18.10.2 | PRUEBAS Y ENSAYOS |  | 10d | 2022-02-28 | 2022-03-11 | 493FS-10d, 502FS-10d, 506FS-10d, 510FS-10d, 513FS-10d, 521FS-10d, 528FS-10d, 535FS-10d, 487FS-10d | 0d |  |
| 542 | 2.3.18.10.3 | ENSAYOS FINALES (E.T.I.) - CETREN |  | 5d | 2022-03-14 | 2022-03-18 | 540, 541, 406 | 0d |  |
| 543 | 2.3.18.11 | REMATES Y TERMINACIONES |  | 5d | 2022-03-14 | 2022-03-18 | 542SS | 10d |  |
| 544 | 3 | **ZONA CENTRAL ESTACIÓN** |  | 555d | 2021-04-12 | 2023-07-10 |  | 0d |  |
| 545 | 3.1 | **HITOS** |  | 180d | 2021-05-27 | 2022-02-15 |  | 0d |  |
| 546 | 3.1.1 | CORTE TRÁFICO FERROVIARIO | milestone, manual | 0d | 2022-02-15 | 2022-02-15 |  |  |  |
| 547 | 3.1.2 | APROBACIÓN MODIFICADO 2 | milestone, manual | 0d | 2021-11-01 | 2021-11-01 |  |  |  |
| 548 | 3.1.3 | APROBACIÓN DISEÑO LOSA CENTRAL | milestone | 0d | 2021-12-06 | 2021-12-06 | 589SS-14d | 0d |  |
| 549 | 3.1.4 | APROBACIÓN DISEÑO NUEVA ESTACIÓN DEL CARMEN | milestone | 0d | 2021-12-06 | 2021-12-06 | 589SS-14d | 64d |  |
| 550 | 3.1.5 | APROBACIÓN PANTALLAS PK- | milestone | 0d | 2021-12-13 | 2021-12-13 | 577SS-8d | 0d |  |
| 551 | 3.1.6 | APROBACIÓN PLAN DESAMIANTADO ESTACIÓN | milestone, manual | 0d | 2021-05-27 | 2021-05-27 |  |  | start no earlier than 2021-05-27 |
| 552 | 3.1.7 | DISPOSICIÓN ACCESO FLORIDABLANCA | milestone | 0d | 2022-02-15 | 2022-02-15 | 546SS | 0d |  |
| 553 | 3.1.8 | ANULACIÓN ACCESO OFICINAS MANTENIMIENTO | milestone | 0d | 2022-02-15 | 2022-02-15 | 546SS | 0d |  |
| 554 | 3.2 | **DESMONTAJE MARQUESINAS EDIFICIO HISTÓRICO** |  | 20d | 2021-06-04 | 2021-07-01 |  | 0d |  |
| 555 | 3.2.1 | DESAMIANTADO |  | 13d | 2021-06-04 | 2021-06-22 | 551FS+6d | 0d |  |
| 556 | 3.2.2 | ESTRUCTURAS |  | 7d | 2021-06-23 | 2021-07-01 | 555 | 0d |  |
| 557 | 3.3 | **PASO INFERIOR ESTACIÓN DEL CARMEN** |  | 51d | 2021-07-02 | 2021-09-10 |  | 0d |  |
| 558 | 3.3.1 | DEMOLICIÓN |  | 46d | 2021-07-09 | 2021-09-10 | 559 | 0d |  |
| 559 | 3.3.2 | DESMONTAJE ASCENSORES |  | 5d | 2021-07-02 | 2021-07-08 | 556 | 0d |  |
| 560 | 3.3.3 | CORTE TABLESTACADO |  | 16d | 2021-08-20 | 2021-09-10 | 558SS+30d | 0d |  |
| 561 | 3.4 | **DEMOLICIÓN ANDÉN ESTACIÓN DEL CARMEN** |  | 20d | 2021-09-13 | 2021-10-08 |  | 0d |  |
| 562 | 3.4.1 | RIPADO SSAA |  | 10d | 2021-09-27 | 2021-10-08 | 563SS+10d | 23d |  |
| 563 | 3.4.2 | DEMOLICIÓN |  | 15d | 2021-09-13 | 2021-10-01 | 558 | 0d |  |

| ID | WBS | Task | Duration | Start | Finish | Predecessors | Total slack |
| --- | --- | --- | --- | --- | --- | --- | --- |
| 564 | 3.5 | **VÍA MANGO LADO LORCA** | 70d | 2022-02-15 | 2022-05-27 |  | 0d |
| 565 | 3.5.1 | RETIRADA DE VÍA | 20d | 2022-02-15 | 2022-03-14 | 546 | 0d |
| 566 | 3.5.2 | RIPADO SSAA | 20d | 2022-02-15 | 2022-03-14 | 546, 553 | 0d |
| 567 | 3.5.3 | PANTALLAS | 20d | 2022-03-15 | 2022-04-11 | 565, 566 | 0d |
| 568 | 3.5.4 | LOSA C1_Mango | 19d | 2022-04-12 | 2022-05-12 | 567 | 0d |
| 569 | 3.5.5 | TOPERA | 19d | 2022-04-12 | 2022-05-12 | 567 | 0d |
| 570 | 3.5.6 | LIMPIEZA Y ACABADOS | 1d | 2022-05-13 | 2022-05-13 | 569 | 0d |
| 571 | 3.5.7 | CMS-CAF | 10d | 2022-05-16 | 2022-05-27 | 570 | 0d |
| 572 | 3.6 | MÉNSULA C4 | 30d | 2021-11-12 | 2021-12-23 | 347FS+5d | 0d |
| 573 | 3.7 | PILOTES | 89d | 2021-04-12 | 2021-08-12 | 279FS-15d | 0d |
| 574 | 3.8 | **PANTALLAS** | 140d | 2021-11-11 | 2022-06-10 |  | 0d |
| 575 | 3.8.1 | **PANTALLA NORTE** | 90d | 2021-11-11 | 2022-03-28 |  | 0d |
| 576 | 3.8.1.1 | PK+ SALTO DE LOSA | 30d | 2021-11-11 | 2021-12-23 | 561, 577SF | 0d |
| 577 | 3.8.1.2 | **PK- SALTO DE LOSA** | 60d | 2021-12-23 | 2022-03-28 |  | 0d |
| 578 | 3.8.1.2.1 | > NN180 | 30d | 2021-12-23 | 2022-02-15 | 579SF | 30d |
| 579 | 3.8.1.2.2 | < NN180 | 30d | 2022-02-15 | 2022-03-28 | 546 | 0d |
| 580 | 3.8.2 | **PANTALLA SUR** | 60d | 2022-03-15 | 2022-06-10 |  | 0d |
| 581 | 3.8.2.1 | **PK- SALTO DE LOSA** | 60d | 2022-03-15 | 2022-06-10 |  | 0d |
| 582 | 3.8.2.1.1 | > SS180 | 20d | 2022-03-15 | 2022-04-11 | 567SS | 0d |
| 583 | 3.8.2.1.2 | < SS180 | 40d | 2022-04-12 | 2022-06-10 | 582 | 0d |
| 584 | 3.9 | **LOSA SUPERIOR** | 329d | 2021-05-17 | 2022-09-05 |  | 0d |
| 585 | 3.9.1 | REBAJE TERRENO | 250d | 2021-05-17 | 2022-05-17 | 573SS+25d | 0d |
| 586 | 3.9.2 | C1- | 30d | 2022-06-20 | 2022-07-29 | 574FS+5d | 0d |
| 587 | 3.9.3 | C1+ | 30d | 2022-01-12 | 2022-02-22 | 576FS+6d | 0d |
| 588 | 3.9.4 | C1_Mango | 19d | 2022-04-12 | 2022-05-12 | 568SS | 0d |
| 589 | 3.9.5 | C2 | 50d | 2021-12-24 | 2022-03-15 | 572 | 0d |
| 590 | 3.9.6 | C3-C4 | 120d | 2022-03-16 | 2022-09-05 | 589 | 0d |
| 591 | 3.10 | VACIADO TÚNEL | 181d | 2022-03-28 | 2022-12-09 | 589FS+8d | 0d |
| 592 | 3.11 | LOSA INFERIOR | 171d | 2022-06-07 | 2023-02-21 | 591SS+47d | 0d |
| 593 | 3.12 | VÍA E INSTALACIONES | 95d | 2023-02-22 | 2023-07-10 | 592 | 0d |
| 594 | 3.13 | VARIOS | 95d | 2023-02-22 | 2023-07-10 | 592 | 0d |

| ID | WBS | Task | Type | Duration | Start | Finish | Predecessors | Total slack | Free slack | Constraint |
| --- | --- | --- | --- | --- | --- | --- | --- | --- | --- | --- |
| 595 | 4 | **NUEVA ESTACIÓN DEL CARMEN** |  | 321d | 2022-03-16 | 2023-07-10 | 547 | 0d |  |  |
| 596 | 4.1 | NUEVA ESTACIÓN DEL CARMEN |  | 243d | 2022-03-16 | 2023-03-16 | 549, 589 | 0d |  |  |
| 597 | 4.2 | VARIOS |  | 78d | 2023-03-17 | 2023-07-10 | 596 | 0d |  |  |
| 598 | 5 | **BARRIOMAR - TÚNEL DE LÍNEA** |  | 492d | 2021-10-25 | 2023-10-25 |  | 0d |  |  |
| 599 | 5.1 | **HITOS BM** |  | 492d | 2021-10-25 | 2023-10-25 |  | 0d |  |  |
| 600 | 5.1.1 | INICIO PRIVACIÓN DERECHO USO C/ORILLA DE LA VÍA - DESBLOQUEO PARALIZACIÓN TEMPORAL | milestone, manual | 0d | 2021-10-25 | 2021-10-25 |  |  |  | start no earlier than 2021-10-25 |
| 601 | 5.1.2 | FIN PRIVACIÓN DERECHO USO C/ORILLA DE LA VÍA | milestone | 0d | 2023-10-25 | 2023-10-25 | 619, 627, 635 | 0d |  |  |
| 602 | 5.1.3 | FIN PANTALLAS BM | milestone | 0d | 2022-11-02 | 2022-11-02 | 630 | 0d |  |  |
| 603 | 5.1.4 | COMIENZO MONTAJE VÍA BM | milestone | 0d | 2023-03-28 | 2023-03-28 | 610SS | 0d |  |  |
| 604 | 5.2 | **PK 0+000 - 0+868. CARRIL DE LOS MIAJAS/CAMINO ALBADEL (900m)** |  | 421d | 2022-02-02 | 2023-10-16 |  | 0d |  |  |
| 605 | 5.2.1 | SSAA/SERVIDUMBRES |  | 120d | 2022-02-02 | 2022-07-25 | 606SF+90d | 0d |  |  |
| 606 | 5.2.2 | PANTALLAS |  | 90d | 2022-03-16 | 2022-07-25 | 614FS+4d, 622FS+4d | 0d |  |  |
| 607 | 5.2.3 | LOSA SUPERIOR |  | 90d | 2022-05-31 | 2022-10-03 | 606FS-40d | 0d |  |  |
| 608 | 5.2.4 | VACIADO TÚNEL |  | 160d | 2022-07-26 | 2023-03-27 | 607SS+40d | 0d |  |  |
| 609 | 5.2.5 | LOSA INFERIOR |  | 160d | 2022-09-20 | 2023-05-26 | 608SS+40d | 0d |  |  |
| 610 | 5.2.6 | VÍA E INSTALACIONES |  | 79d | 2023-03-28 | 2023-07-20 | 609FS-40d, 632FS-15d, 624FS-15d, 616FS-15d | 0d |  |  |
| 611 | 5.2.7 | VARIOS |  | 82d | 2023-06-23 | 2023-10-16 | 610FS-20d | 0d |  |  |
| 612 | 5.3 | **PK 0+868 - 1+231. CAMINO ALBADEL/CALLE BENSIDA (400m)** |  | 485d | 2021-10-25 | 2023-10-16 |  | 0d |  |  |
| 613 | 5.3.1 | SSAA/SERVIDUMBRES |  | 383d | 2021-10-25 | 2023-05-25 | 600 | 0d |  |  |
| 614 | 5.3.2 | PANTALLAS |  | 80d | 2021-11-08 | 2022-03-09 | 613SS+10d | 0d |  |  |
| 615 | 5.3.3 | LOSA SUPERIOR |  | 80d | 2022-02-10 | 2022-06-07 | 614FS-20d | 0d |  |  |
| 616 | 5.3.4 | VACIADO TÚNEL |  | 90d | 2022-04-07 | 2022-08-16 | 615SS+40d | 159d | 0d |  |
| 617 | 5.3.5 | LOSA INFERIOR |  | 90d | 2022-06-08 | 2022-10-11 | 616SS+40d | 180d | 173d |  |
| 618 | 5.3.6 | VÍA E INSTALACIONES |  | 47d | 2023-06-23 | 2023-08-28 | 610FS-20d, 617FS-10d, 632FS-10d, 624FS-10d | 7d | 0d |  |
| 619 | 5.3.7 | VARIOS |  | 55d | 2023-08-01 | 2023-10-16 | 618FS-20d | 7d |  |  |

| ID | WBS | Task | Type | Duration | Start | Finish | Predecessors | Total slack | Free slack | Constraint |
| --- | --- | --- | --- | --- | --- | --- | --- | --- | --- | --- |
| 620 | 5.4 | **PK 1+231 - 1+620. CALLE BENSIDA/CALLE BARRIOMAR (400m)** |  | 485d | 2021-10-25 | 2023-10-16 |  | 0d |  |  |
| 621 | 5.4.1 | SSAA/SERVIDUMBRES |  | 383d | 2021-10-25 | 2023-05-25 | 600 | 0d |  |  |
| 622 | 5.4.2 | PANTALLAS |  | 80d | 2021-11-08 | 2022-03-09 | 621SS+10d | 0d |  |  |
| 623 | 5.4.3 | LOSA SUPERIOR |  | 80d | 2022-02-10 | 2022-06-07 | 622FS-20d | 0d |  |  |
| 624 | 5.4.4 | VACIADO TÚNEL |  | 90d | 2022-04-07 | 2022-08-16 | 623SS+40d | 159d | 0d |  |
| 625 | 5.4.5 | LOSA INFERIOR |  | 90d | 2022-06-08 | 2022-10-11 | 624SS+40d | 217d | 210d |  |
| 626 | 5.4.6 | VÍA E INSTALACIONES |  | 45d | 2023-08-15 | 2023-10-16 | 610FS-10d, 618FS-10d, 625FS-10d, 632FS-10d | 7d | 0d |  |
| 627 | 5.4.7 | VARIOS |  | 20d | 2023-09-19 | 2023-10-16 | 626FS-20d | 7d |  |  |
| 628 | 5.5 | **PK 1+620 - 1+822. A-30/CRUCE FLORIDABLANCA (200m)** |  | 492d | 2021-10-25 | 2023-10-25 |  | 0d |  |  |
| 629 | 5.5.1 | SSAA/SERVIDUMBRES |  | 383d | 2021-10-25 | 2023-05-25 | 621SS | 0d |  |  |
| 630 | 5.5.2 | PANTALLAS |  | 70d | 2022-07-28 | 2022-11-02 | 606FS+2d | 0d |  |  |
| 631 | 5.5.3 | LOSA SUPERIOR |  | 40d | 2022-10-06 | 2022-11-30 | 630FS-20d | 0d |  |  |
| 632 | 5.5.4 | VACIADO TÚNEL |  | 50d | 2022-12-01 | 2023-03-01 | 631SS+40d | 0d |  |  |
| 633 | 5.5.5 | LOSA INFERIOR |  | 40d | 2023-02-16 | 2023-04-18 | 632SS+40d | 0d |  |  |
| 634 | 5.5.6 | VÍA E INSTALACIONES |  | 43d | 2023-08-28 | 2023-10-25 | 626SS | 0d |  | start no earlier than 2023-08-28 |
| 635 | 5.5.7 | VARIOS |  | 20d | 2023-09-28 | 2023-10-25 | 634FS-20d | 0d |  |  |
| 636 | 6 | **NONDUERMAS - TÚNEL DE LÍNEA** |  | 492d | 2021-10-25 | 2023-10-25 |  | 0d |  |  |
| 637 | 6.1 | **HITOS ND** |  | 453d | 2021-10-25 | 2023-09-01 |  | 0d |  |  |
| 638 | 6.1.1 | DESBLOQUEO PARALIZACIÓN TEMPORAL | milestone | 0d | 2021-10-25 | 2021-10-25 | 600SS | 0d |  |  |
| 639 | 6.1.2 | FIN PANTALLAS ND | milestone | 0d | 2022-09-05 | 2022-09-05 | 663 | 0d |  |  |
| 640 | 6.1.3 | COMIENZO MONTAJE VÍA ND | milestone | 0d | 2023-09-01 | 2023-09-01 | 644SS, 651SS, 659SS, 667SS, 675SS | 0d |  |  |
| 641 | 6.2 | **PK 0+000 - 0+717. ACEQUÍA MAYOR ALQUIBLA/CALLE LIBERTAD (700m)** |  | 492d | 2021-10-25 | 2023-10-25 |  | 0d |  |  |
| 642 | 6.2.1 | **PK 0+000 - 0+280. PLATAFORMA EN TIERRAS** |  | 452d | 2021-12-20 | 2023-10-25 |  | 0d |  |  |
| 643 | 6.2.1.1 | SSAA/SERVIDUMBRES |  | 40d | 2021-12-20 | 2022-02-23 | 647 | 0d |  |  |
| 644 | 6.2.1.2 | VÍA E INSTALACIONES |  | 36d | 2023-09-01 | 2023-10-20 | 651SS | 0d |  |  |
| 645 | 6.2.1.3 | VARIOS |  | 13d | 2023-10-09 | 2023-10-25 | 644FS-10d | 0d |  |  |

| ID | WBS | Task | Duration | Start | Finish | Predecessors | Total slack | Free slack |
| --- | --- | --- | --- | --- | --- | --- | --- | --- |
| 646 | 6.2.2 | **PK 0+280 - 0+670. RAMPA ENTRE PANTALLAS** | 492d | 2021-10-25 | 2023-10-25 |  | 0d |  |
| 647 | 6.2.2.1 | SSAA/SERVIDUMBRES | 40d | 2021-10-25 | 2021-12-17 | 638 | 0d |  |
| 648 | 6.2.2.2 | PANTALLAS | 80d | 2021-12-20 | 2022-04-26 | 647 | 0d |  |
| 649 | 6.2.2.3 | VACIADO TÚNEL | 60d | 2022-04-27 | 2022-07-19 | 648 | 213d | 0d |
| 650 | 6.2.2.4 | LOSA INFERIOR | 100d | 2022-06-22 | 2022-11-08 | 649SS+40d | 213d |  |
| 651 | 6.2.2.5 | VÍA E INSTALACIONES | 36d | 2023-09-01 | 2023-10-20 | 650FS-20d, 675FS-20d, 667FS-20d | 0d |  |
| 652 | 6.2.2.6 | VARIOS | 13d | 2023-10-09 | 2023-10-25 | 651FS-10d | 0d |  |
| 653 | 6.2.3 | **PK 0+670 - 0+717. RAMPA ENTRE PANTALLAS CON ESTAMPIDORES** | 380d | 2022-04-11 | 2023-10-25 |  | 0d |  |
| 654 | 6.2.3.1 | SSAA/SERVIDUMBRES | 10d | 2022-04-11 | 2022-04-29 | 655SF | 0d |  |
| 655 | 6.2.3.2 | PANTALLAS | 10d | 2022-04-29 | 2022-05-12 | 648FS+2d | 0d |  |
| 656 | 6.2.3.3 | ESTAMPIDORES | 10d | 2022-05-13 | 2022-05-26 | 655 | 0d |  |
| 657 | 6.2.3.4 | VACIADO TÚNEL | 15d | 2022-05-27 | 2022-06-16 | 656 | 0d |  |
| 658 | 6.2.3.5 | LOSA INFERIOR | 15d | 2022-06-17 | 2022-07-07 | 657 | 0d |  |
| 659 | 6.2.3.6 | VÍA E INSTALACIONES | 36d | 2023-09-01 | 2023-10-20 | 651SS | 0d |  |
| 660 | 6.2.3.7 | VARIOS | 13d | 2023-10-09 | 2023-10-25 | 659FS-10d | 0d |  |
| 661 | 6.3 | **PK 0+717 - 1+217. CALLE LIBERTAD/RM-611 : TÚNEL (500m)** | 401d | 2022-03-02 | 2023-10-16 |  | 0d |  |
| 662 | 6.3.1 | SSAA/SERVIDUMBRES | 50d | 2022-03-02 | 2022-05-17 | 663SF | 0d |  |
| 663 | 6.3.2 | PANTALLAS | 80d | 2022-05-17 | 2022-09-05 | 655FS+2d | 0d |  |
| 664 | 6.3.3 | LOSA SUPERIOR | 100d | 2022-08-23 | 2023-01-30 | 663FS-10d | 0d |  |
| 665 | 6.3.4 | VACIADO TÚNEL | 115d | 2022-10-18 | 2023-04-21 | 664SS+40d | 44d | 0d |
| 666 | 6.3.5 | LOSA INFERIOR | 115d | 2022-12-13 | 2023-06-16 | 665SS+40d | 44d |  |
| 667 | 6.3.6 | VÍA E INSTALACIONES | 50d | 2023-07-21 | 2023-09-28 | 649FS-20d, 657FS-20d, 665FS-20d, 666FS-20d, 675FS-30d | 0d |  |
| 668 | 6.3.7 | VARIOS | 32d | 2023-09-01 | 2023-10-16 | 667FS-20d | 0d |  |
| 669 | 6.4 | **PK 1+217 - 2+160. RM-611/CALLE ESPERANZA : ESTAMPIDORES (1000m)** | 485d | 2021-10-25 | 2023-10-16 |  | 0d |  |
| 670 | 6.4.1 | SSAA/SERVIDUMBRES | 160d | 2021-10-25 | 2022-06-21 | 638 | 0d |  |
| 671 | 6.4.2 | PANTALLAS | 170d | 2021-11-08 | 2022-07-19 | 670SS+10d | 0d |  |
| 672 | 6.4.3 | ESTAMPIDORES | 100d | 2022-06-22 | 2022-11-08 | 671FS-20d | 0d |  |
| 673 | 6.4.4 | VACIADO TÚNEL | 200d | 2022-08-17 | 2023-06-19 | 672SS+40d | 0d |  |
| 674 | 6.4.5 | LOSA INFERIOR | 193d | 2022-10-12 | 2023-08-03 | 673SS+40d | 0d |  |
| 675 | 6.4.6 | VÍA E INSTALACIONES | 80d | 2023-05-12 | 2023-08-31 | 649FS-40d, 657FS-40d, 665FS-40d, 673FS-40d, 674FS-60d | 0d |  |
| 676 | 6.4.7 | VARIOS | 52d | 2023-08-04 | 2023-10-16 | 675FS-20d | 0d |  |

| ID | WBS | Task | Duration | Start | Finish | Predecessors | Total slack |
| --- | --- | --- | --- | --- | --- | --- | --- |
| 677 | 6.4.8 | **PK 2+160 - 2+503,793. CALLE ESPERANZA/CARRIL DE LOS MIAJAS : TÚNEL (350m)** | 343d | 2021-10-25 | 2023-03-24 |  | 0d |
| 678 | 6.4.8.1 | SSAA/SERVIDUMBRES | 60d | 2021-10-25 | 2022-01-26 | 670SS | 0d |
| 679 | 6.4.8.2 | PANTALLAS | 65d | 2021-11-08 | 2022-02-16 | 678SS+10d | 0d |
| 680 | 6.4.8.3 | LOSA SUPERIOR | 65d | 2022-01-20 | 2022-04-26 | 679FS-20d | 0d |
| 681 | 6.4.8.4 | VACIADO TÚNEL | 80d | 2022-03-17 | 2022-07-12 | 680SS+40d | 0d |
| 682 | 6.4.8.5 | LOSA INFERIOR | 80d | 2022-05-18 | 2022-09-06 | 681SS+40d | 0d |
| 683 | 6.4.8.6 | VÍA E INSTALACIONES | 50d | 2022-07-27 | 2022-10-04 | 682FS-30d | 0d |
| 684 | 6.4.8.7 | VARIOS | 128d | 2022-09-07 | 2023-03-24 | 683FS-20d | 0d |
